# 内审业务综合管理系统

Schedule from MS Project, 2009-02-09 to 2009-03-25, status date 2009-03-31, A marks actual dates.

## Calendars

- 标准: Mon-Fri 08:00-12:00, 13:00-17:00; Sat-Sun off.

## Resources

| Resource | Group |
| --- | --- |
| 尹海 | 开发二部 |
| 杜海雷 | 开发二部 |
| 杨蕾 |  |
| 姜凤祥 | 开发二部 |
| 马剑 | 开发二部 |
| 靳晔 | 开发二部 |
| 于鹏 | 开发二部 |
| 郗新江 | 开发二部 |
| 国杰 | 开发二部 |
| 陈志东 |  |
| 张海亮 |  |
| 刘小维 |  |
| 李晓娜 |  |

## Schedule

| ID | WBS | Task | Type | Duration | Start | Finish | Predecessors | Complete | Remaining | Baseline start | Baseline finish | Baseline duration | Total slack | Free slack | Constraint | Resources | Work | Actual work | Text6 | Text17 | Text22 |
| --- | --- | --- | --- | --- | --- | --- | --- | --- | --- | --- | --- | --- | --- | --- | --- | --- | --- | --- | --- | --- | --- |
| 1 | 1 | **个人身份信息库系统** |  | 33d | 2009-02-09 A | 2009-03-25 |  | 70% | 9.83d |  |  |  | 0d |  | start no earlier than 2009-02-09 |  | 580h | 505.6h |  |  |  |
| 2 | 1.1 | **需求分析** |  | 14d | 2009-02-09 A | 2009-02-26 A |  | 100% |  | 2006-03-06 | 2006-06-23 | 77d |  |  |  | 张海亮 | 112h | 112h | 金电公司 | 171 |  |
| 3 | 1.1.1 | 需求分析内部提交 |  | 5d | 2009-02-09 A | 2009-02-13 A |  | 100% |  |  |  |  |  |  | start no earlier than 2009-02-09 |  |  |  |  |  |  |
| 4 | 1.1.2 | 需求分析内部评审 |  | 1d | 2009-02-25 A | 2009-02-25 A | 3 | 100% |  |  |  |  |  |  | start no earlier than 2009-02-25 |  |  |  |  |  |  |
| 5 | 1.1.3 | 需求分析内部评审后修改 |  | 1d | 2009-02-26 A | 2009-02-26 A | 4 | 100% |  |  |  |  |  |  |  |  |  |  |  |  |  |
| 6 | 1.2 | **应用软件开发** |  | 25d | 2009-02-09 A | 2009-03-13 |  | 87% | 3.18d |  |  |  | 8d |  |  |  | 468h | 393.6h |  | 1152 |  |
| 7 | 1.2.1 | **概要设计** |  | 5d | 2009-02-23 A | 2009-02-27 |  | 60% | 2d | 2006-04-17 | 2006-05-26 | 27d | 18d |  |  | 陈志东; 张海亮 | 80h | 48h | 金电公司 |  |  |
| 8 | 1.2.1.1 | 系统概要设计 |  | 3d | 2009-02-23 A | 2009-02-25 A |  | 100% |  | 2006-04-17 | 2006-05-17 | 20d |  |  | start no earlier than 2009-02-23 |  |  |  |  |  |  |
| 9 | 1.2.1.2 | 内部提交系统概要设计说明书 | milestone | 0d | 2009-02-25 A | 2009-02-25 A | 8 | 100% |  | 2006-05-18 | 2006-05-18 | 1d |  |  |  |  |  |  |  |  | 概要设计说明书 |
| 10 | 1.2.1.3 | 概要设计文档评审或文档测试 |  | 1d | 2009-02-26 | 2009-02-26 | 9 |  |  | 2006-05-26 | 2006-05-26 | 1d | 18d | 0d |  |  |  |  |  |  |  |
| 11 | 1.2.1.4 | 概要设计评审后修改及定稿 |  | 1d | 2009-02-27 A | 2009-02-27 | 10 |  | 1d |  |  |  | 18d |  |  |  |  |  |  |  |  |
| 12 | 1.2.2 | **详细设计** |  | 5d | 2009-03-02 A | 2009-03-06 |  | 60% | 2d | 2006-04-17 | 2006-05-26 | 27d | 13d |  |  | 陈志东; 张海亮 | 80h | 48h | 金电公司 |  |  |
| 13 | 1.2.2.1 | 系统详细设计 |  | 3d | 2009-03-02 A | 2009-03-04 A | 11 | 100% |  | 2006-04-17 | 2006-05-17 | 20d |  |  | start no earlier than 2009-02-24 |  |  |  |  |  |  |
| 14 | 1.2.2.2 | 内部提交系统详细设计说明书 | milestone | 0d | 2009-03-04 A | 2009-03-04 A | 13 | 100% |  | 2006-05-18 | 2006-05-18 | 1d |  |  |  |  |  |  |  |  | 详细设计说明书 |
| 15 | 1.2.2.3 | 详细设计文档评审或文档测试 |  | 1d | 2009-03-05 | 2009-03-05 | 14 |  |  | 2006-05-26 | 2006-05-26 | 1d | 13d | 0d |  |  |  |  |  |  |  |
| 16 | 1.2.2.4 | 详细设计评审后修改及定稿 |  | 1d | 2009-03-06 | 2009-03-06 | 15 |  |  |  |  |  | 13d |  |  |  |  |  |  |  |  |
| 17 | 1.2.3 | 数据库设计 | milestone | 0d | 2009-02-09 | 2009-02-09 |  |  |  | 2006-04-17 | 2006-07-24 | 68d | 33d |  |  |  |  |  | 金电公司 |  |  |
| 18 | 1.2.4 | **应用设计与编码实现** |  | 20d | 2009-02-16 A | 2009-03-13 |  | 94% | 1.16d | 2006-06-22 | 2006-09-13 | 60d | 8d |  |  |  | 308h | 297.6h | 金电公司 |  |  |
| 19 | 1.2.4.1 | **前台部分开发（包括单元测试）** |  | 19d | 2009-02-16 A | 2009-03-12 |  | 99% | 0.19d |  |  |  | 9d |  |  |  | 156h | 154.4h |  |  |  |
| 20 | 1.2.4.1.1 | **一、个人身份信息报告内部查询版** |  | 5.5d | 2009-02-16 A | 2009-02-23 A |  | 100% |  |  |  |  |  |  |  | 张海亮 | 44h | 44h |  |  |  |
| 21 | 1.2.4.1.1.1 | 1、代码编写 |  | 5d | 2009-02-16 A | 2009-02-20 A |  | 100% |  |  |  |  |  |  | start no earlier than 2009-02-16 |  |  |  |  |  |  |
| 22 | 1.2.4.1.1.2 | 2、代码走查 |  | 0.5d | 2009-02-23 A | 2009-02-23 A | 21 | 100% |  |  |  |  |  |  |  |  |  |  |  |  |  |
| 23 | 1.2.4.1.2 | **二、个人身份信息报告银行标准版** |  | 3.5d | 2009-02-23 A | 2009-02-26 A |  | 100% |  |  |  |  |  |  |  | 张海亮 | 28h | 28h |  |  |  |
| 24 | 1.2.4.1.2.1 | 1、代码编写 |  | 3d | 2009-02-23 A | 2009-02-25 A |  | 100% |  |  |  |  |  |  | start no earlier than 2009-02-23 |  |  |  |  |  |  |
| 25 | 1.2.4.1.2.2 | 2、代码走查 |  | 0.5d | 2009-02-26 A | 2009-02-26 A | 24 | 100% |  |  |  |  |  |  |  |  |  |  |  |  |  |

Notes:
- 2: 3
- 6: 12

| ID | WBS | Task | Duration | Start | Finish | Predecessors | Complete | Remaining | Total slack | Free slack | Constraint | Resources | Work | Actual work |
| --- | --- | --- | --- | --- | --- | --- | --- | --- | --- | --- | --- | --- | --- | --- |
| 26 | 1.2.4.1.3 | **三、个人身份信息报告完全版** | 3.5d | 2009-02-27 A | 2009-03-04 A |  | 100% |  |  |  |  | 张海亮 | 28h | 28h |
| 27 | 1.3.4.1.1.3.1 | 1、代码编写 | 3d | 2009-02-27 A | 2009-03-03 A |  | 100% |  |  |  | start no earlier than 2009-02-27 |  |  |  |
| 28 | 1.3.4.1.1.3.2 | 2、代码走查 | 0.5d | 2009-03-04 A | 2009-03-04 A | 27 | 100% |  |  |  |  |  |  |  |
| 29 | 1.2.4.1.4 | **四、在线提交身份信息更新请求** | 4d | 2009-03-04 A | 2009-03-09 |  | 95% | 0.2d | 12d |  |  | 张海亮 | 32h | 30.4h |
| 30 | 1.2.4.1.4.1 | 1、代码编写 | 3.5d | 2009-03-04 A | 2009-03-09 A |  | 100% |  |  |  | start no earlier than 2009-03-04 |  |  |  |
| 31 | 1.2.4.1.4.2 | 2、代码走查 | 0.5d | 2009-03-09 A | 2009-03-09 | 30 | 60% | 0.2d | 12d |  |  |  |  |  |
| 32 | 1.2.4.1.5 | **五、查看身份信息在线更新情况** | 3d | 2009-03-10 A | 2009-03-12 A |  | 100% |  |  |  |  | 张海亮 | 24h | 24h |
| 33 | 1.2.4.1.5.1 | 1、代码编写 | 2.5d | 2009-03-10 A | 2009-03-12 A |  | 100% |  |  |  | start no earlier than 2009-03-10 |  |  |  |
| 34 | 1.2.4.1.5.2 | 2、代码走查 | 0.5d | 2009-03-12 A | 2009-03-12 A | 33 | 100% |  |  |  |  |  |  |  |
| 35 | 1.2.4.2 | **运行管理部分开发（包括单元测试）** | 18.5d | 2009-02-16 A | 2009-03-12 |  | 94% | 1.07d | 9.5d |  |  |  | 152h | 143.2h |
| 36 | 1.2.4.2.1 | **一、发起身份信息整理任务** | 9.5d | 2009-02-16 A | 2009-02-27 A |  | 100% |  |  |  |  | 陈志东 | 76h | 76h |
| 37 | 1.2.4.2.1.1 | 1、数据抽取 | 3d | 2009-02-16 A | 2009-02-18 A |  | 100% |  |  |  | start no earlier than 2009-02-16 |  |  |  |
| 38 | 1.2.4.2.1.2 | 2、数据加工 | 3d | 2009-02-19 A | 2009-02-23 A | 37 | 100% |  |  |  |  |  |  |  |
| 39 | 1.2.4.2.1.3 | 3、数据回迁 | 3d | 2009-02-24 A | 2009-02-26 A | 38 | 100% |  |  |  |  |  |  |  |
| 40 | 1.2.4.2.1.4 | 4、代码走查 | 0.5d | 2009-02-27 A | 2009-02-27 A | 39 | 100% |  |  |  |  |  |  |  |
| 41 | 1.2.4.2.2 | **二、查看身份信息整理日志** | 3.5d | 2009-02-27 A | 2009-03-04 A |  | 100% |  |  |  |  | 陈志东 | 28h | 28h |
| 42 | 1.2.4.2.2.1 | 1、代码编写 | 3d | 2009-02-27 A | 2009-03-03 A |  | 100% |  |  |  | start no earlier than 2009-02-27 |  |  |  |
| 43 | 1.2.4.2.2.2 | 2、代码走查 | 0.5d | 2009-03-04 A | 2009-03-04 A | 42 | 100% |  |  |  |  |  |  |  |
| 44 | 1.2.4.2.3 | **三、查看身份信息整理统计结果** | 3.5d | 2009-03-05 A | 2009-03-10 |  | 93% | 0.25d | 11.5d |  |  | 陈志东 | 28h | 26h |
| 45 | 1.2.4.2.3.1 | 1、代码编写 | 3d | 2009-03-05 A | 2009-03-09 A |  | 100% |  |  |  | start no earlier than 2009-03-05 |  |  |  |
| 46 | 1.2.4.2.3.2 | 2、代码走查 | 0.5d | 2009-03-10 A | 2009-03-10 | 45 | 50% | 0.25d | 11.5d |  |  |  |  |  |
| 47 | 1.2.4.2.4 | **四、在线更新身份信息调度** | 2.5d | 2009-03-10 A | 2009-03-12 |  | 66% | 0.85d | 0.5d |  |  | 陈志东 | 20h | 13.2h |
| 48 | 1.2.4.2.4.1 | 1、代码编写 | 2d | 2009-03-10 A | 2009-03-11 |  | 70% | 0.6d | 0.75d | 0d | start no earlier than 2009-03-10 |  |  |  |
| 49 | 1.2.4.2.4.2 | 2、代码走查 | 0.5d | 2009-03-12 A | 2009-03-12 | 48 | 50% | 0.25d | 0.5d |  |  |  |  |  |
| 50 | 1.2.4.3 | 第一轮联调测试 | 1d | 2009-03-13 | 2009-03-13 | 49 |  |  | 0d |  | start no earlier than 2009-03-13 |  |  |  |

| ID | WBS | Task | Type | Duration | Start | Finish | Predecessors | Baseline start | Baseline finish | Baseline duration | Total slack | Free slack | Constraint | Text17 | Text6 | Text22 |
| --- | --- | --- | --- | --- | --- | --- | --- | --- | --- | --- | --- | --- | --- | --- | --- | --- |
| 51 | 1.3 | **系统测试** |  | 23d | 2009-02-23 | 2009-03-25 |  |  |  |  | 0d |  |  | 435 |  |  |
| 52 | 1.3.1 | **应用测试** |  | 7d | 2009-02-23 | 2009-03-03 |  | 2006-08-03 | 2006-10-30 | 60d | 16d |  |  |  |  |  |
| 53 | 1.3.1.1 | 测试方案编写 |  | 5d | 2009-02-23 | 2009-02-27 |  |  |  |  | 16d | 0d | start no earlier than 2009-02-23 |  |  |  |
| 54 | 1.3.1.2 | 测试方案评审 |  | 1d | 2009-03-02 | 2009-03-02 | 53 |  |  |  | 16d | 0d |  |  |  |  |
| 55 | 1.3.1.3 | 测试方案修改 |  | 1d | 2009-03-03 | 2009-03-03 | 54 |  |  |  | 16d |  |  |  |  |  |
| 56 | 1.3.2 | **业务测试** |  | 8d | 2009-03-16 | 2009-03-25 |  | 2006-09-28 | 2006-10-30 | 20d | 0d |  |  |  |  |  |
| 57 | 1.3.2.1 | **第一次业务测试** |  | 4d | 2009-03-16 | 2009-03-19 |  |  |  |  | 0d |  |  |  |  |  |
| 58 | 1.3.2.1.1 | 第一次业务测试 |  | 2d | 2009-03-16 | 2009-03-17 | 50 |  |  |  | 0d |  |  |  | 内审司、金电公司 |  |
| 59 | 1.3.2.1.2 | 第一次业务测试报告提交 | milestone | 0d | 2009-03-17 | 2009-03-17 | 58 |  |  |  | 6d |  |  |  | 内审司 | 系统测试报告 |
| 60 | 1.3.2.1.3 | 第一次业务测试修改 |  | 2d | 2009-03-18 | 2009-03-19 | 58 |  |  |  | 0d |  |  |  | 金电公司 |  |
| 61 | 1.3.2.2 | **第二次业务测试** |  | 4d | 2009-03-20 | 2009-03-25 |  |  |  |  | 0d |  |  |  |  |  |
| 62 | 1.3.2.2.1 | 第二次业务测试 |  | 2d | 2009-03-20 | 2009-03-23 | 60 |  |  |  | 0d |  |  |  | 内审司、金电公司 |  |
| 63 | 1.3.2.2.2 | 第二次业务测试报告提交 | milestone | 0d | 2009-03-23 | 2009-03-23 | 62 |  |  |  | 2d |  |  |  | 内审司 | 系统测试报告 |
| 64 | 1.3.2.2.3 | 第二次业务测试修改 |  | 2d | 2009-03-24 | 2009-03-25 | 62 |  |  |  | 0d |  |  |  | 金电公司 |  |
| 65 | 1.4 | 应用软件定版 | milestone | 0d | 2009-03-25 | 2009-03-25 | 64 |  |  |  | 0d |  | start no earlier than 2008-10-01 |  |  |  |

Notes:
- 51: 5
