# 2009质量监控_综合计划

Schedule from MS Project, 2009-03-27 to 2009-11-11.
Microsoft

## Calendars

- 标准: Mon-Fri 08:00-12:00, 13:00-17:00; Sat-Sun off. Exceptions (off unless hours are given): 2009-05-01.

## Resources

| Resource |
| --- |
| 0 工作日 |
| 张海亮 |
| 陈娟 |
| 尹海 |
| 朱杰 |
| 张彩珍 |
| 赵春华 |
| 霍印鹏 |
| 杨文勇 |
| 刘小维 |
| 邹时乐 |
| 余海灵 |
| 班廷伦 |
| 陈志东 |

## Schedule

| ID | WBS | Task | Type | Duration | Start | Finish | Predecessors | Total slack | Free slack | Constraint | Resources | Work | Text5 | Text4 | Text8 | Text13 | Text1 | Text7 | Text12 | Text2 |
| --- | --- | --- | --- | --- | --- | --- | --- | --- | --- | --- | --- | --- | --- | --- | --- | --- | --- | --- | --- | --- |
| 1 | 1 | **项目启动和计划阶段** |  | 10d | 2009-04-13 | 2009-04-24 |  | 141.5d |  |  |  | 112h | 阶段 |  |  |  |  |  |  |  |
| 2 | 1.1 | 项目启动会 |  | 1d | 2009-04-13 | 2009-04-13 |  | 141.5d | 0d | start no earlier than 2009-04-13 | 刘小维; 陈娟 | 16h |  | 1.1 | 项目管理 | 工程 |  |  |  |  |
| 3 | 1.2 | 制定计划 |  | 5d | 2009-04-14 | 2009-04-20 | 2 | 141.5d | 0d |  | 刘小维 | 40h | 活动 | 1.2 | 项目管理 | 工程 | 0107 | 项目计划 | 不裁剪 |  |
| 4 | 1.3 | 评估风险 |  | 3d | 2009-04-21 | 2009-04-23 | 3 | 141.5d | 0d |  | 刘小维; 尹海 | 48h | 活动 | 1.3 | 项目管理 | 工程 | 0108 | 风险跟踪表 | 不裁剪 |  |
| 5 | 1.4 | 审批并发布项目计划 | milestone | 1d | 2009-04-24 | 2009-04-24 | 4 | 141.5d |  |  | 朱杰 | 8h | 过程 | 1.4 | 评审 | 工程 | 0109 | 项目计划批准表 | 不裁剪 |  |
| 6 | 2 | **需求分析和总体设计阶段** |  | 30.5d | 2009-04-28 | 2009-06-10 |  | 0d |  |  |  | 416h | 阶段 |  |  |  |  |  |  |  |
| 7 | 2.1 | **需求分析** |  | 30.5d | 2009-04-28 | 2009-06-10 |  | 0d |  |  |  | 180h | 过程 | 2.1 |  | 工程 | 1100 |  | 不裁剪 |  |
| 8 | 2.1.1 | 分析系统需求 |  | 6d | 2009-04-28 | 2009-05-06 |  | 0d |  | start no earlier than 2009-04-28 | 刘小维 | 48h | 活动 | 2.1.2 | 需求分析 | 工程 | 1102 | 软件需求规格说明(实体关系) | 不裁剪 |  |
| 9 | 2.1.2 | 分析系统需求(续) |  | 6d | 2009-05-07 | 2009-05-14 | 8 | 0d |  |  | 刘小维 | 48h |  |  |  |  |  |  |  |  |
| 10 | 2.1.3 | 开发界面原型 |  | 4d | 2009-05-15 | 2009-05-20 | 9 | 0d |  | start no earlier than 2009-04-27 | 刘小维 | 32h | 活动 | 2.1.3 | 需求分析 | 工程 | 1103 | 系统界面设计规范、系统界面原型 | 不裁剪 | 10 |
| 11 | 2.1.4 | 内部评审需求 |  | 1d | 2009-05-21 | 2009-05-21 | 10 | 0d |  |  | 刘小维 | 8h | 活动 | 2.1.4 | 评审 | 工程 | 1100 |  | 不裁剪 | 11 |
| 12 | 2.1.5 | 修订需求规格 |  | 2d | 2009-05-22 | 2009-05-25 | 11 | 0d |  |  | 刘小维 | 16h | 活动 | 2.1.5 | 返工活动 | 工程 | 1100 |  | 不裁剪 | 12 |
| 13 | 2.1.6 | 填写需求跟踪矩阵 |  | 0.5d | 2009-05-26 | 2009-05-26 | 12 | 0d |  |  | 刘小维 | 4h | 活动 | 2.1.6 | 需求管理 | 支持 | 0401 | 需求跟踪矩阵 | 不裁剪 | 13 |
| 14 | 2.1.7 | 用户评审需求 |  | 8d | 2009-05-26 | 2009-06-05 | 13 | 0d |  |  |  |  | 活动 | 3.1.8 | 评审 | 工程 | 1100 |  | 不裁剪 | 32 |
| 15 | 2.1.8 | 修订需求规格 |  | 3d | 2009-06-05 | 2009-06-10 | 14 | 0d |  |  | 刘小维 | 24h | 活动 | 3.1.10 | 返工活动 | 工程 | 1100 |  | 不裁剪 | 34 |
| 16 | 2.2 | **技术方案设计** |  | 27.5d | 2009-04-28 | 2009-06-05 |  | 3d |  |  |  | 236h |  |  |  |  |  |  |  |  |
| 17 | 2.2.1 | 技术方案编写 |  | 10d | 2009-04-28 | 2009-05-12 |  | 3d | 0d | start no earlier than 2009-04-28 | 陈志东 | 80h |  |  |  |  |  |  |  |  |
| 18 | 2.2.2 | **内部评审技术方案** |  | 3.5d | 2009-05-13 | 2009-05-18 |  | 3d |  |  |  | 28h | 活动 | 2.2.3 | 评审 | 工程 | 1104 | 技术总体方案 | 不裁剪 | 17 |
| 19 | 2.2.2.1 | 细化评审计划 |  | 0.5d | 2009-05-13 | 2009-05-13 | 17 | 3d | 0d |  | 陈志东 | 4h |  |  |  |  |  |  |  |  |
| 20 | 2.2.2.2 | 个别评审 |  | 2d | 2009-05-13 | 2009-05-15 | 19 | 3d | 0d |  | 陈志东 | 16h |  |  |  |  |  |  |  |  |
| 21 | 2.2.2.3 | 验证问题 |  | 1d | 2009-05-15 | 2009-05-18 | 20 | 3d | 0d |  | 陈志东 | 8h |  |  |  |  |  |  |  |  |
| 22 | 2.2.3 | 技术方案评审后修改 |  | 2d | 2009-05-18 | 2009-05-20 | 21 | 3d | 0d |  | 陈志东 | 16h |  |  |  |  |  |  |  |  |
| 23 | 2.2.4 | 原型开发 |  | 10d | 2009-05-20 | 2009-06-03 | 22 | 3d | 0d |  | 陈志东 | 80h |  |  |  |  |  |  |  |  |
| 24 | 2.2.5 | 原型测试及评审 |  | 2d | 2009-06-03 | 2009-06-05 | 23 | 3d |  |  | 陈志东; 尹海 | 32h |  |  |  |  |  |  |  |  |

| ID | WBS | Task | Duration | Start | Finish | Predecessors | Total slack | Free slack | Resources | Work | Text2 | Text5 | Text4 | Text1 | Text7 | Text8 | Text12 | Text13 |
| --- | --- | --- | --- | --- | --- | --- | --- | --- | --- | --- | --- | --- | --- | --- | --- | --- | --- | --- |
| 25 | 3 | **设计开发测试阶段** | 98.5d | 2009-06-10 | 2009-10-26 |  | 0d |  |  | 1132h | 23 | 阶段 |  |  |  |  |  |  |
| 26 | 3.1 | **概要设计子阶段** | 8.5d | 2009-06-10 | 2009-06-22 |  | 0d |  |  | 136h | 24 | 阶段 | 3.1 |  |  |  |  |  |
| 27 | 3.1.1 | **概要设计** | 4.5d | 2009-06-10 | 2009-06-16 |  | 0d |  |  | 68h | 25 | 活动 | 3.1.1 | 1201 | 概要设计说明书 | 设计 | 不裁剪 | 工程 |
| 28 | 3.1.1.1 | **前台部分开发（包括单元测试）** | 4d | 2009-06-10 | 2009-06-16 |  | 0d |  |  | 56h |  |  |  |  |  |  |  |  |
| 29 | 3.1.1.1.1 | 一、特定信息上传 | 2d | 2009-06-10 | 2009-06-12 | 15, 24 | 0d |  | 陈志东 | 16h |  |  |  |  |  |  |  |  |
| 30 | 3.1.1.1.2 | 二、特定信息下载 | 1d | 2009-06-12 | 2009-06-15 | 29 | 0d |  | 陈志东 | 8h |  |  |  |  |  |  |  |  |
| 31 | 3.1.1.1.3 | 三、已上传文件查询 | 1d | 2009-06-10 | 2009-06-11 | 15, 24 | 102.5d | 0d | 刘小维 | 8h |  |  |  |  |  |  |  |  |
| 32 | 3.1.1.1.4 | 四、公共信息上传下载 | 1d | 2009-06-15 | 2009-06-16 | 30 | 0d |  | 陈志东 | 8h |  |  |  |  |  |  |  |  |
| 33 | 3.1.1.1.5 | 五、公共信息查询 | 1d | 2009-06-11 | 2009-06-12 | 31 | 102.5d | 0d | 刘小维 | 8h |  |  |  |  |  |  |  |  |
| 34 | 3.1.1.1.6 | 六、数据备份 | 0.5d | 2009-06-12 | 2009-06-12 | 33 | 102.5d | 0d | 刘小维 | 4h |  |  |  |  |  |  |  |  |
| 35 | 3.1.1.1.7 | 七、数据清理 | 0.5d | 2009-06-15 | 2009-06-15 | 34 | 102.5d | 0d | 刘小维 | 4h |  |  |  |  |  |  |  |  |
| 36 | 3.1.1.2 | **运行管理部分开发（包括单元测试）** | 1.5d | 2009-06-15 | 2009-06-16 |  | 102.5d |  |  | 12h |  |  |  |  |  |  |  |  |
| 37 | 3.1.1.2.1 | 一、用户权限管理 | 1d | 2009-06-15 | 2009-06-16 | 35 | 102.5d | 0d | 刘小维 | 8h | 26 | 活动 | 3.1.2 | 1201 | 概要设计说明书 | 评审 | 不裁剪 | 工程 |
| 38 | 3.1.1.2.2 | 二、日志管理 | 0.5d | 2009-06-16 | 2009-06-16 | 37 | 102.5d | 0d | 刘小维 | 4h | 27 | 活动 | 3.1.3 | 1201 | 概要设计说明书 | 返工活动 | 不裁剪 | 工程 |
| 39 | 3.1.2 | 评审概要设计 | 0.5d | 2009-06-17 | 2009-06-17 | 38 | 102.5d | 0d | 刘小维; 尹海 | 8h | 26 | 活动 | 3.1.2 | 1201 | 概要设计说明书 | 评审 | 不裁剪 | 工程 |
| 40 | 3.1.3 | 修订概要设计 | 2d | 2009-06-17 | 2009-06-19 | 39 | 102.5d | 0d | 刘小维 | 16h | 27 | 活动 | 3.1.3 | 1201 | 概要设计说明书 | 返工活动 | 不裁剪 | 工程 |
| 41 | 3.1.4 | 填写需求跟踪矩阵 | 0.5d | 2009-06-19 | 2009-06-19 | 40 | 102.5d |  | 刘小维 | 4h | 28 | 活动 | 3.1.4 | 0401 | 需求跟踪矩阵 | 需求管理 | 不裁剪 | 支持 |
| 42 | 3.1.5 | 数据库逻辑设计 | 3d | 2009-06-16 | 2009-06-19 | 32 | 0d |  | 陈志东 | 24h | 29 | 活动 | 3.1.5 | 1202 | 数据库逻辑设计说明书 | 设计 | 不裁剪 | 工程 |
| 43 | 3.1.6 | 评审数据库逻辑设计 | 0.5d | 2009-06-19 | 2009-06-19 | 42 | 0d |  | 陈志东; 尹海 | 8h | 30 | 活动 | 3.1.6 | 1202 | 数据库逻辑设计说明书 | 评审 | 不裁剪 | 工程 |
| 44 | 3.1.7 | 修订数据库逻辑设计 | 1d | 2009-06-22 | 2009-06-22 | 43 | 0d |  | 陈志东 | 8h | 31 | 活动 | 3.1.7 | 1202 | 数据库逻辑设计说明书 | 返工活动 | 不裁剪 | 工程 |
| 45 | 3.2 | **详细设计子阶段** | 11d | 2009-06-23 | 2009-07-07 |  | 0d |  |  | 176h | 45 | 阶段 | 3.2 |  |  |  |  |  |
| 46 | 3.2.1 | **详细设计** | 8d | 2009-06-23 | 2009-07-02 |  | 0d |  |  | 128h | 46 | 活动 | 3.2.1 | 1203 |  | 设计 | 裁剪输出 | 工程 |
| 47 | 3.2.1.1 | **前台部分开发（包括单元测试）** | 8d | 2009-06-23 | 2009-07-02 |  | 0d |  |  | 112h |  |  |  |  |  |  |  |  |
| 48 | 3.2.1.1.1 | 一、特定信息上传 | 3d | 2009-06-23 | 2009-06-25 | 44 | 93.5d | 0d | 陈志东 | 24h |  |  |  |  |  |  |  |  |
| 49 | 3.2.1.1.2 | 二、特定信息下载 | 2d | 2009-06-26 | 2009-06-29 | 48 | 93.5d | 0d | 陈志东 | 16h |  |  |  |  |  |  |  |  |
| 50 | 3.2.1.1.3 | 三、已上传文件查询 | 2d | 2009-06-23 | 2009-06-24 | 44 | 0d |  | 刘小维 | 16h |  |  |  |  |  |  |  |  |
| 51 | 3.2.1.1.4 | 四、公共信息上传下载 | 3d | 2009-06-30 | 2009-07-02 | 49 | 93.5d |  | 陈志东 | 24h |  |  |  |  |  |  |  |  |
| 52 | 3.2.1.1.5 | 五、公共信息查询 | 2d | 2009-06-25 | 2009-06-26 | 50 | 0d |  | 刘小维 | 16h |  |  |  |  |  |  |  |  |
| 53 | 3.2.1.1.6 | 六、数据备份 | 1d | 2009-06-29 | 2009-06-29 | 52 | 0d |  | 刘小维 | 8h |  |  |  |  |  |  |  |  |
| 54 | 3.2.1.1.7 | 七、数据清理 | 1d | 2009-06-30 | 2009-06-30 | 53 | 0d |  | 刘小维 | 8h |  |  |  |  |  |  |  |  |

| ID | WBS | Task | Duration | Start | Finish | Predecessors | Total slack | Free slack | Constraint | Resources | Work | Text1 | Text2 | Text4 | Text5 | Text7 | Text8 | Text12 | Text13 |
| --- | --- | --- | --- | --- | --- | --- | --- | --- | --- | --- | --- | --- | --- | --- | --- | --- | --- | --- | --- |
| 55 | 3.2.1.2 | **运行管理部分开发（包括单元测试）** | 2d | 2009-07-01 | 2009-07-02 |  | 0d |  |  |  | 16h |  |  |  |  |  |  |  |  |
| 56 | 3.2.1.2.1 | 一、用户权限管理 | 1d | 2009-07-01 | 2009-07-01 | 54 | 0d |  |  | 刘小维 | 8h | 1201 | 26 | 3.1.2 | 活动 | 概要设计说明书 | 评审 | 不裁剪 | 工程 |
| 57 | 3.2.1.2.2 | 二、日志管理 | 1d | 2009-07-02 | 2009-07-02 | 56 | 0d |  |  | 刘小维 | 8h | 1201 | 27 | 3.1.3 | 活动 | 概要设计说明书 | 返工活动 | 不裁剪 | 工程 |
| 58 | 3.2.2 | 评审详细设计 | 1d | 2009-07-03 | 2009-07-03 | 57 | 0d |  |  | 刘小维; 尹海 | 16h | 1203 | 47 | 3.2.2 | 活动 |  | 评审 | 裁剪输出 | 工程 |
| 59 | 3.2.3 | 修订详细设计 | 2d | 2009-07-06 | 2009-07-07 | 58 | 0d |  |  | 陈志东; 刘小维 | 32h | 1203 | 48 | 3.2.3 | 活动 |  | 返工活动 | 裁剪输出 | 工程 |
| 60 | 3.3 | **编码子阶段** | 25.5d | 2009-07-08 | 2009-08-12 |  | 0d |  |  |  | 412h |  | 53 | 3.3 | 阶段 |  |  |  |  |
| 61 | 3.3.1 | 制定代码编写规范 | 1d | 2009-07-08 | 2009-07-08 | 59 | 0d |  |  | 刘小维; 尹海 | 16h | 1205 | 54 | 3.3.1 | 活动 | 代码 | 编码及单元测试 | 不裁剪 | 工程 |
| 62 | 3.3.2 | **编码及单元测试** | 8d | 2009-07-09 | 2009-07-20 |  | 0d |  |  |  | 128h | 1205 | 58 | 3.3.5 | 活动 | 代码 | 编码及单元测试 | 不裁剪 | 工程 |
| 63 | 3.3.2.1 | **前台部分开发（包括单元测试）** | 8d | 2009-07-09 | 2009-07-20 |  | 0d |  |  |  | 112h |  |  |  |  |  |  |  |  |
| 64 | 3.3.2.1.1 | 一、特定信息上传 | 3d | 2009-07-09 | 2009-07-13 | 61 | 81.5d | 0d |  | 陈志东 | 24h |  |  |  |  |  |  |  |  |
| 65 | 3.3.2.1.2 | 二、特定信息下载 | 2d | 2009-07-14 | 2009-07-15 | 64 | 81.5d | 0d |  | 陈志东 | 16h |  |  |  |  |  |  |  |  |
| 66 | 3.3.2.1.3 | 三、已上传文件查询 | 2d | 2009-07-09 | 2009-07-10 | 61 | 0d |  |  | 刘小维 | 16h |  |  |  |  |  |  |  |  |
| 67 | 3.3.2.1.4 | 四、公共信息上传下载 | 3d | 2009-07-16 | 2009-07-20 | 65 | 81.5d |  |  | 陈志东 | 24h |  |  |  |  |  |  |  |  |
| 68 | 3.3.2.1.5 | 五、公共信息查询 | 2d | 2009-07-13 | 2009-07-14 | 66 | 0d |  |  | 刘小维 | 16h |  |  |  |  |  |  |  |  |
| 69 | 3.3.2.1.6 | 六、数据备份 | 1d | 2009-07-15 | 2009-07-15 | 68 | 0d |  |  | 刘小维 | 8h |  |  |  |  |  |  |  |  |
| 70 | 3.3.2.1.7 | 七、数据清理 | 1d | 2009-07-16 | 2009-07-16 | 69 | 0d |  |  | 刘小维 | 8h |  |  |  |  |  |  |  |  |
| 71 | 3.3.2.2 | **运行管理部分开发（包括单元测试）** | 2d | 2009-07-17 | 2009-07-20 |  | 0d |  |  |  | 16h |  |  |  |  |  |  |  |  |
| 72 | 3.3.2.2.1 | 一、用户权限管理 | 1d | 2009-07-17 | 2009-07-17 | 70 | 0d |  |  | 刘小维 | 8h | 1201 | 26 | 3.1.2 | 活动 | 概要设计说明书 | 评审 | 不裁剪 | 工程 |
| 73 | 3.3.2.2.2 | 二、日志管理 | 1d | 2009-07-20 | 2009-07-20 | 72 | 0d |  |  | 刘小维 | 8h | 1201 | 27 | 3.1.3 | 活动 | 概要设计说明书 | 返工活动 | 不裁剪 | 工程 |
| 74 | 3.3.3 | 代码评审 | 3d | 2009-07-21 | 2009-07-23 | 73 | 0d |  |  | 刘小维; 陈志东 | 48h | 1205 | 59 | 3.3.6 | 活动 | 代码 | 评审 | 不裁剪 | 工程 |
| 75 | 3.3.4 | 软件集成及测试 | 1d | 2009-07-24 | 2009-07-24 | 74 | 0d |  |  | 陈志东 | 8h | 1206 | 61 | 3.3.8 | 活动 | 集成后的产品 | 软件集成 | 不裁剪 | 工程 |
| 76 | 3.3.5 | 修复软件集成测试BUG | 1d | 2009-07-27 | 2009-07-27 | 75 | 0d |  |  | 陈志东 | 8h | 1206 | 62 | 3.3.9 | 活动 | 集成后的产品 | 返工活动 | 不裁剪 | 工程 |
| 77 | 3.3.6 | **设计系统测试用例（续）** | 10d | 2009-07-08 | 2009-07-21 |  | 76.5d |  |  |  | 80h | 1403 | 63 | 3.3.10 | 活动 | 系统测试用例 | 测试 | 不裁剪 | 工程 |
| 78 | 3.3.6.1 | 编写测试用例 | 5d | 2009-07-08 | 2009-07-14 | 59 | 76.5d | 0d |  | 霍印鹏 | 40h |  |  |  |  |  |  |  |  |
| 79 | 3.3.6.2 | 编写测试用例(续) | 5d | 2009-07-15 | 2009-07-21 | 78 | 76.5d | 0d |  | 霍印鹏 | 40h |  |  |  |  |  |  |  |  |
| 80 | 3.3.7 | 评审系统测试用例 | 0.5d | 2009-07-22 | 2009-07-22 | 79 | 76.5d | 0d |  | 霍印鹏; 尹海 | 8h | 1403 | 64 | 3.3.11 | 活动 | 系统测试用例 | 评审 | 不裁剪 | 工程 |
| 81 | 3.3.8 | 修改系统测试用例 | 3d | 2009-07-22 | 2009-07-27 | 80 | 76.5d | 0d |  | 霍印鹏 | 24h | 1403 | 65 | 3.3.12 | 活动 | 系统测试用例 | 返工活动 | 不裁剪 | 工程 |
| 82 | 3.3.9 | 填写需求跟踪矩阵 | 0.5d | 2009-07-27 | 2009-07-27 | 81 | 76.5d |  |  | 刘小维 | 4h | 0401 | 13 | 2.1.6 | 活动 | 需求跟踪矩阵 | 需求管理 | 不裁剪 | 支持 |
| 83 | 3.3.10 | 制定工程实施方案（全部） | 5d | 2009-07-29 | 2009-08-04 |  | 65d | 0d | start no earlier than 2009-07-29 | 杨文勇 | 40h | 1301 | 66 | 3.3.13 | 活动 | 工程实施方案 | 集成实施 | 不裁剪 | 工程 |
| 84 | 3.3.11 | 公司内部评审工程实施方案 | 0.5d | 2009-08-05 | 2009-08-05 | 83 | 65d | 0d |  | 杨文勇; 尹海 | 8h | 1301 | 67 | 3.3.14 | 活动 | 工程实施方案 | 评审 | 不裁剪 | 工程 |
| 85 | 3.3.12 | 制定系统集成手册 | 5d | 2009-08-05 | 2009-08-12 | 84 | 65d |  |  | 杨文勇 | 40h | 1302 | 68 | 3.3.15 | 活动 | 系统集成手册 | 集成实施 | 不裁剪 | 工程 |

| ID | WBS | Task | Duration | Start | Finish | Predecessors | Total slack | Free slack | Resources | Work | Text2 | Text4 | Text5 | Text1 | Text7 | Text8 | Text12 | Text13 |
| --- | --- | --- | --- | --- | --- | --- | --- | --- | --- | --- | --- | --- | --- | --- | --- | --- | --- | --- |
| 86 | 3.4 | **内部测试子阶段** | 11d | 2009-07-28 | 2009-08-11 |  | 0d |  |  | 152h | 69 | 3.4 | 阶段 |  |  |  |  |  |
| 87 | 3.4.1 | 搭建系统测试环境 | 1d | 2009-07-28 | 2009-07-28 | 76 | 0d |  | 杨文勇 | 8h | 71 | 3.4.2 | 活动 | 1303 | 系统测试环境 | 集成实施 | 不裁剪 | 工程 |
| 88 | 3.4.2 | 第一轮功能测试 | 3d | 2009-07-29 | 2009-07-31 | 87 | 0d |  | 霍印鹏 | 24h | 72 | 3.4.3 | 活动 | 1404 | 系统测试报告 | 测试 | 不裁剪 | 工程 |
| 89 | 3.4.3 | 修复第一轮功能测试BUG | 2d | 2009-08-03 | 2009-08-04 | 88 | 0d |  | 刘小维; 陈志东 | 32h | 73 | 3.4.4 | 活动 | 1404 | 系统测试报告 | 返工活动 | 不裁剪 | 工程 |
| 90 | 3.4.4 | 第二轮功能测试 | 3d | 2009-08-05 | 2009-08-07 | 89 | 0d |  | 霍印鹏 | 24h | 74 | 3.4.5 | 活动 | 1404 | 系统测试报告 | 测试 | 不裁剪 | 工程 |
| 91 | 3.4.5 | 修复第二轮功能测试BUG | 2d | 2009-08-10 | 2009-08-11 | 90 | 0d |  | 刘小维; 陈志东 | 32h | 77 | 3.4.8 | 活动 | 1404 | 系统测试报告 | 测试 | 不裁剪 | 工程 |
| 92 | 3.4.6 | 编写用户操作手册 | 4d | 2009-07-28 | 2009-07-31 | 76 | 72.5d |  | 刘小维 | 32h | 78 | 3.4.9 | 活动 | 1207 | 用户操作手册 | 集成实施 | 不裁剪 | 工程 |
| 93 | 3.5 | **外部测试子阶段** | 54d | 2009-08-12 | 2009-10-26 |  | 0d |  |  | 256h | 79 | 3.5 | 阶段 |  |  |  |  |  |
| 94 | 3.5.1 | 业务测试 | 10d | 2009-08-12 | 2009-08-25 | 91 | 0d |  |  |  | 92 | 3.5.3 | 活动 |  |  |  |  | 工程 |
| 95 | 3.5.2 | 业务测试修改 | 8d | 2009-08-26 | 2009-09-04 | 94 | 0d |  | 刘小维 | 64h |  |  |  |  |  |  |  |  |
| 96 | 3.5.3 | 业务测试(续) | 10d | 2009-09-07 | 2009-09-18 | 95 | 0d |  |  |  | 92 | 3.5.3 | 活动 |  |  |  |  | 工程 |
| 97 | 3.5.4 | 业务测试修改 | 8d | 2009-09-21 | 2009-09-30 | 96 | 0d |  | 刘小维 | 64h |  |  |  |  |  |  |  |  |
| 98 | 3.5.5 | 业务测试(续) | 10d | 2009-10-01 | 2009-10-14 | 97 | 0d |  |  |  | 92 | 3.5.3 | 活动 |  |  |  |  | 工程 |
| 99 | 3.5.6 | 业务测试修改 | 8d | 2009-10-15 | 2009-10-26 | 98 | 0d |  | 刘小维 | 64h |  |  |  |  |  |  |  |  |
| 100 | 3.5.7 | **制定工程实施计划** | 7d | 2009-08-12 | 2009-08-20 |  | 58.5d |  |  | 64h | 103 | 3.5.5 | 活动 |  |  | 集成实施 |  | 工程 |
| 101 | 3.5.7.1 | 制定工程实施计划 | 3d | 2009-08-12 | 2009-08-14 | 91 | 58.5d | 0d | 刘小维 | 24h | 104 | 3.5.5.1 | 活动 |  |  | 集成实施 |  | 工程 |
| 102 | 3.5.7.2 | 评审工程实施计划 | 1d | 2009-08-17 | 2009-08-17 | 101 | 58.5d | 0d | 刘小维; 尹海 | 16h | 105 | 3.5.5.2 | 活动 |  |  | 评审 |  | 工程 |
| 103 | 3.5.7.3 | 修订工程实施计划 | 3d | 2009-08-18 | 2009-08-20 | 102 | 58.5d |  | 刘小维 | 24h | 106 | 3.5.5.3 | 活动 |  |  | 返工活动 |  | 工程 |
| 104 | 4 | **工程实施阶段** | 11.5d | 2009-10-27 | 2009-11-11 |  | 0d |  |  | 92h | 107 |  | 阶段 |  |  |  |  |  |
| 105 | 4.1 | **生产环境上线实施** | 8d | 2009-10-27 | 2009-11-05 |  | 0d |  |  | 64h | 113 | 4.2 | 活动 | 1308 | 生产环境 |  | 不裁剪 | 工程 |
| 106 | 4.1.1 | 制定上线实施详细计划 | 2d | 2009-10-27 | 2009-10-28 | 99 | 0d |  | 刘小维 | 16h | 114 | 4.2.1 | 活动 | 1308 | 生产环境 | 集成实施 | 不裁剪 | 工程 |
| 107 | 4.1.2 | 搭建生产环境 | 2d | 2009-10-29 | 2009-10-30 | 106 | 0d |  | 杨文勇 | 16h | 115 | 4.2.2 | 活动 | 1308 | 生产环境 | 集成实施 | 不裁剪 | 工程 |
| 108 | 4.1.3 | 验证生产环境 | 2d | 2009-11-02 | 2009-11-03 | 107 | 0d |  | 杨文勇 | 16h | 116 | 4.2.3 | 活动 | 1308 | 生产环境 | 集成实施 | 不裁剪 | 工程 |
| 109 | 4.1.4 | 编制上线实施报告 | 1d | 2009-11-04 | 2009-11-04 | 108 | 0d |  | 杨文勇 | 8h | 117 | 4.2.4 | 活动 | 1308 | 生产环境 | 集成实施 | 不裁剪 | 工程 |
| 110 | 4.1.5 | 验证并完善系统集成手册（运维分册） | 1d | 2009-11-05 | 2009-11-05 | 109 | 0d |  | 杨文勇 | 8h | 118 | 4.2.5 | 活动 | 1302 | 系统集成手册 | 集成实施 | 不裁剪 | 工程 |

| ID | WBS | Task | Type | Duration | Start | Finish | Predecessors | Total slack | Resources | Work | Text1 | Text2 | Text4 | Text5 | Text12 | Text13 | Text7 | Text8 |
| --- | --- | --- | --- | --- | --- | --- | --- | --- | --- | --- | --- | --- | --- | --- | --- | --- | --- | --- |
| 111 | 4.2 | **项目总结** |  | 3.5d | 2009-11-06 | 2009-11-11 |  | 0d |  | 28h | 0200 | 122 | 4.3 | 活动 | 不裁剪 | 支持 |  |  |
| 112 | 4.2.1 | 编制项目总结报告 |  | 2d | 2009-11-06 | 2009-11-09 | 110 | 0d | 刘小维 | 16h | 0205 | 123 | 4.3.1 | 活动 | 不裁剪 | 支持 | 项目总结报告,员工满意度调查 | 项目管理 |
| 113 | 4.2.2 | 员工满意度调查 |  | 1d | 2009-11-10 | 2009-11-10 | 112 | 0d | 刘小维 | 8h | 0205 | 124 | 4.3.2 | 活动 | 不裁剪 | 支持 | 项目总结报告,员工满意度调查 | 项目管理 |
| 114 | 4.2.3 | 项目总结会 | milestone | 0.5d | 2009-11-11 | 2009-11-11 | 113 | 0d | 刘小维 | 4h | 0201 | 125 | 4.3.3 | 活动 | 不裁剪 | 支持 | QONE数据，项目监控与度量数据跟踪表 | 项目管理 |
| 115 | 5 | **项目管理活动** |  | 1d? | 2009-03-27 | 2009-03-27 |  | 161.5d |  |  | 0200 | 126 |  | 过程 | 不裁剪 | 支持 |  | 项目管理 |
| 116 | 5.1 | **需求分析和总体设计阶段** |  | 1d? | 2009-03-27 | 2009-03-27 |  | 161.5d |  |  |  | 127 | 5.1 |  |  |  |  | 项目管理 |
| 117 | 5.1.1 | 项目策划（第二次） |  | 1d? | 2009-03-27 | 2009-03-27 |  | 161.5d |  |  | 0100 | 128 | 5.1.1 | 活动 | 不裁剪 | 支持 |  | 项目管理 |
| 118 | 5.1.2 | 需求分析和总体设计阶段里程碑评审 | milestone | 1d? | 2009-03-27 | 2009-03-27 |  | 161.5d |  |  | 0201 | 129 | 5.1.2 | 活动 | 不裁剪 | 支持 | QONE数据，项目监控与度量数据跟踪表 | 项目管理 |
| 119 | 5.2 | **设计开发测试阶段** |  | 1d? | 2009-03-27 | 2009-03-27 |  | 161.5d |  |  |  | 130 | 5.2 |  |  |  |  | 项目管理 |
| 120 | 5.2.1 | 设计开发测试阶段里程碑评审 | milestone | 1d? | 2009-03-27 | 2009-03-27 |  | 161.5d |  |  | 0201 | 131 | 5.2.1 | 活动 | 不裁剪 | 支持 | QONE数据，项目监控与度量数据跟踪表 | 项目管理 |
| 121 | 5.3 | 填写、审批任务报告（周期性任务） |  | 1d? | 2009-03-27 | 2009-03-27 |  | 161.5d |  |  | 0201 | 132 | 5.3 | 活动 | 不裁剪 | 支持 | QONE数据，项目监控与度量数据跟踪表 | 项目管理 |
| 122 | 5.4 | 填写项目进展报告（周期性任务） |  | 1d? | 2009-03-27 | 2009-03-27 |  | 161.5d |  |  | 0201 | 133 | 5.4 | 活动 | 不裁剪 | 支持 | QONE数据，项目监控与度量数据跟踪表 | 项目管理 |
| 123 | 5.5 | 项目例会（周期性任务） |  | 1d? | 2009-03-27 | 2009-03-27 |  | 161.5d |  |  | 0201 | 134 | 5.5 | 活动 | 不裁剪 | 支持 | QONE数据，项目监控与度量数据跟踪表 | 项目管理 |
| 124 | 5.6 | 问题风险跟踪（周期性任务） |  | 1d? | 2009-03-27 | 2009-03-27 |  | 161.5d |  |  | 0201 | 135 | 5.6 | 活动 | 不裁剪 | 支持 | QONE数据，项目监控与度量数据跟踪表 | 项目管理 |
| 125 | 5.7 | 项目变更管理（事件触发） |  | 1d? | 2009-03-27 | 2009-03-27 |  | 161.5d |  |  | 0201 | 136 | 5.7 | 活动 | 不裁剪 | 支持 | QONE数据，项目监控与度量数据跟踪表 | 项目管理 |
| 126 | 5.8 | 调整计划、分配任务（周期性任务） |  | 1d? | 2009-03-27 | 2009-03-27 |  | 161.5d |  |  | 0107 | 137 | 5.8 | 活动 | 不裁剪 | 支持 | 项目计划 | 项目管理 |
| 127 | 6 | **项目支持活动** |  | 1d? | 2009-03-27 | 2009-03-27 |  | 161.5d |  |  |  | 138 |  |  |  |  |  |  |
| 128 | 6.1 | **需求管理** |  | 1d? | 2009-03-27 | 2009-03-27 |  | 161.5d |  |  | 0400 | 139 | 6.1 | 过程 | 不裁剪 | 支持 |  | 需求管理 |
| 129 | 6.1.1 | 需求变更管理（事件触发） |  | 1d? | 2009-03-27 | 2009-03-27 |  | 161.5d |  |  | 0402 | 140 | 6.1.1 | 活动 | 不裁剪 | 支持 | 配置变更申请表、变更与问题日志 | 需求管理 |
| 130 | 6.1.2 | 需求变更的跟踪和报告（事件触发） |  | 1d? | 2009-03-27 | 2009-03-27 |  | 161.5d |  |  | 0404 | 141 | 6.1.2 | 活动 | 不裁剪 | 支持 | 需求变更统计报告 | 需求管理 |
| 131 | 6.2 | **配置管理** |  | 1d? | 2009-03-27 | 2009-03-27 |  | 161.5d |  |  | 0300 | 142 | 6.2 | 活动 | 不裁剪 | 支持 |  | 配置管理 |
| 132 | 6.2.1 | **项目启动和计划阶段** |  | 1d? | 2009-03-27 | 2009-03-27 |  | 161.5d |  |  |  | 143 | 6.2.1 |  |  |  |  | 配置管理 |
| 133 | 6.2.1.1 | 制定配置管理计划 |  | 1d? | 2009-03-27 | 2009-03-27 |  | 161.5d |  |  | 0301 | 144 | 6.2.1.1 | 活动 | 不裁剪 | 支持 | 配置管理计划 | 配置管理 |
| 134 | 6.2.1.2 | 建立配置库 |  | 1d? | 2009-03-27 | 2009-03-27 |  | 161.5d |  |  | 0305 | 145 | 6.2.1.2 | 活动 | 不裁剪 | 支持 | cc中建立vob storage | 配置管理 |
| 135 | 6.2.1.3 | 创建配置状态记录 |  | 1d? | 2009-03-27 | 2009-03-27 |  | 161.5d |  |  | 0306 | 146 | 6.2.1.3 | 活动 | 不裁剪 | 支持 | 配置状态记录 | 配置管理 |

| ID | WBS | Task | Duration | Start | Finish | Total slack | Text2 | Text4 | Text8 | Text1 | Text5 | Text7 | Text12 | Text13 |
| --- | --- | --- | --- | --- | --- | --- | --- | --- | --- | --- | --- | --- | --- | --- |
| 136 | 6.2.2 | **需求分析和总体设计阶段** | 1d? | 2009-03-27 | 2009-03-27 | 161.5d | 147 | 6.2.2 | 配置管理 |  |  |  |  |  |
| 137 | 6.2.2.1 | 需求基线配置审计 | 1d? | 2009-03-27 | 2009-03-27 | 161.5d | 148 | 6.2.2.1 | 配置管理 | 0308 | 活动 | 基线发布报告 | 不裁剪 | 支持 |
| 138 | 6.2.2.2 | 发布需求基线 | 1d? | 2009-03-27 | 2009-03-27 | 161.5d | 149 | 6.2.2.2 | 配置管理 | 0307 | 活动 | 基线发布报告 | 不裁剪 | 支持 |
| 139 | 6.2.3 | **设计开发测试阶段** | 1d? | 2009-03-27 | 2009-03-27 | 161.5d | 150 | 6.2.3 | 配置管理 |  |  |  |  |  |
| 140 | 6.2.3.1 | **概要设计子阶段** | 1d? | 2009-03-27 | 2009-03-27 | 161.5d | 151 | 6.2.3.1 | 配置管理 |  |  |  |  |  |
| 141 | 6.2.3.1.1 | 设计基线配置审计（可裁剪） | 1d? | 2009-03-27 | 2009-03-27 | 161.5d | 152 | 6.2.3.1.1 | 配置管理 | 0308 | 活动 | 基线发布报告 | 不裁剪 | 支持 |
| 142 | 6.2.3.1.2 | 发布设计基线 | 1d? | 2009-03-27 | 2009-03-27 | 161.5d | 153 | 6.2.3.1.2 | 配置管理 | 0307 | 活动 | 基线发布报告 | 不裁剪 | 支持 |
| 143 | 6.2.3.2 | **详细设计子阶段** | 1d? | 2009-03-27 | 2009-03-27 | 161.5d | 154 | 6.2.3.2 | 配置管理 |  |  |  |  |  |
| 144 | 6.2.3.2.1 | 工程实施方案基线配置审计（可裁剪） | 1d? | 2009-03-27 | 2009-03-27 | 161.5d | 155 | 6.2.3.2.1 | 配置管理 | 0308 | 活动 | 基线发布报告 | 不裁剪 | 支持 |
| 145 | 6.2.3.2.2 | 发布工程实施方案基线报告 | 1d? | 2009-03-27 | 2009-03-27 | 161.5d | 156 | 6.2.3.2.2 | 配置管理 | 0307 | 活动 | 基线发布报告 | 不裁剪 | 支持 |
| 146 | 6.2.3.3 | **编码子阶段** | 1d? | 2009-03-27 | 2009-03-27 | 161.5d | 157 | 6.2.3.3 | 配置管理 |  |  |  |  |  |
| 147 | 6.2.3.3.1 | 代码基线配置审计（可裁剪） | 1d? | 2009-03-27 | 2009-03-27 | 161.5d | 158 | 6.2.3.3.1 | 配置管理 | 0308 | 活动 | 基线发布报告 | 不裁剪 | 支持 |
| 148 | 6.2.3.3.2 | 发布代码基线 | 1d? | 2009-03-27 | 2009-03-27 | 161.5d | 159 | 6.2.3.3.2 | 配置管理 | 0307 | 活动 | 基线发布报告 | 不裁剪 | 支持 |
| 149 | 6.2.3.4 | **内部测试子阶段** | 1d? | 2009-03-27 | 2009-03-27 | 161.5d | 160 | 6.2.3.4 | 配置管理 |  |  |  |  |  |
| 150 | 6.2.3.4.1 | 测试基线配置审计（可裁剪） | 1d? | 2009-03-27 | 2009-03-27 | 161.5d | 161 | 6.2.3.4.1 | 配置管理 | 0308 | 活动 | 基线发布报告 | 不裁剪 | 支持 |
| 151 | 6.2.3.4.2 | 发布测试基线 | 1d? | 2009-03-27 | 2009-03-27 | 161.5d | 162 | 6.2.3.4.2 | 配置管理 | 0307 | 活动 | 基线发布报告 | 不裁剪 | 支持 |
| 152 | 6.2.3.5 | **外部测试子阶段** | 1d? | 2009-03-27 | 2009-03-27 | 161.5d | 163 | 6.2.3.5 | 配置管理 |  |  |  |  |  |
| 153 | 6.2.3.5.1 | 测试基线配置审计（可裁剪） | 1d? | 2009-03-27 | 2009-03-27 | 161.5d | 164 | 6.2.3.5.1 | 配置管理 | 0308 | 活动 | 基线发布报告 | 不裁剪 | 支持 |
| 154 | 6.2.3.5.2 | 发布测试基线报告 | 1d? | 2009-03-27 | 2009-03-27 | 161.5d | 165 | 6.2.3.5.2 | 配置管理 | 0307 | 活动 | 基线发布报告 | 不裁剪 | 支持 |
| 155 | 6.2.4 | **工程实施阶段** | 1d? | 2009-03-27 | 2009-03-27 | 161.5d | 166 | 6.2.4 | 配置管理 |  |  |  |  |  |
| 156 | 6.2.4.1 | 软件产品基线配置审计 | 1d? | 2009-03-27 | 2009-03-27 | 161.5d | 167 | 6.2.4.1 | 配置管理 | 0308 | 活动 | 基线发布报告 | 不裁剪 | 支持 |
| 157 | 6.2.4.2 | 发布软件产品基线报告 | 1d? | 2009-03-27 | 2009-03-27 | 161.5d | 168 | 6.2.4.2 | 配置管理 | 0307 | 活动 | 基线发布报告 | 不裁剪 | 支持 |
| 158 | 6.2.4.3 | 产品发布 | 1d? | 2009-03-27 | 2009-03-27 | 161.5d | 169 | 6.2.4.3 | 配置管理 | 0309 | 活动 | 产品发布报告 | 不裁剪 | 支持 |
| 159 | 6.2.5 | 产品检查及入库（周期性任务） | 1d? | 2009-03-27 | 2009-03-27 | 161.5d | 170 | 6.2.5 | 配置管理 | 0303 | 活动 | 配置状态记录 | 不裁剪 | 支持 |
| 160 | 6.2.6 | 配置状态记录（周期性任务） | 1d? | 2009-03-27 | 2009-03-27 | 161.5d | 171 | 6.2.6 | 配置管理 | 0306 | 活动 | 配置状态记录 | 不裁剪 | 支持 |
| 161 | 6.2.7 | 变更控制（事件触发） | 1d? | 2009-03-27 | 2009-03-27 | 161.5d | 172 | 6.2.7 | 配置管理 | 0310 | 活动 | 变更单、cq | 不裁剪 | 支持 |

| ID | WBS | Task | Duration | Start | Finish | Total slack | Text1 | Text2 | Text4 | Text5 | Text8 | Text12 | Text13 | Text7 |
| --- | --- | --- | --- | --- | --- | --- | --- | --- | --- | --- | --- | --- | --- | --- |
| 162 | 6.3 | **质量保证** | 1d? | 2009-03-27 | 2009-03-27 | 161.5d | 0500 | 173 | 6.3 | 过程 | QA | 不裁剪 | 支持 |  |
| 163 | 6.3.1 | **项目启动和计划阶段** | 1d? | 2009-03-27 | 2009-03-27 | 161.5d |  | 174 | 6.3.1 |  | QA |  |  |  |
| 164 | 6.3.1.1 | 支持项目策划 | 1d? | 2009-03-27 | 2009-03-27 | 161.5d | 0501 | 175 | 6.3.1.1 | 活动 | QA | 不裁剪 | 支持 | 项目计划 |
| 165 | 6.3.1.2 | 制定质量保证计划 | 1d? | 2009-03-27 | 2009-03-27 | 161.5d | 0501 | 176 | 6.3.1.2 | 活动 | QA | 不裁剪 | 支持 | 项目计划 |
| 166 | 6.3.1.3 | **过程审核** | 1d? | 2009-03-27 | 2009-03-27 | 161.5d | 0502 | 177 | 6.3.1.3 | 活动 | QA | 不裁剪 | 支持 | 过程审核报告 |
| 167 | 6.3.1.3.1 | 审核项目策划过程 | 1d? | 2009-03-27 | 2009-03-27 | 161.5d | 0502 | 178 | 6.3.1.3.1 | 活动 | QA | 不裁剪 | 支持 | 过程审核报告 |
| 168 | 6.3.1.3.2 | 审核度量分析过程 | 1d? | 2009-03-27 | 2009-03-27 | 161.5d | 0502 | 179 | 6.3.1.3.2 | 活动 | QA | 不裁剪 | 支持 | 过程审核报告 |
| 169 | 6.3.1.4 | **产品审核** | 1d? | 2009-03-27 | 2009-03-27 | 161.5d | 0503 | 180 | 6.3.1.4 | 活动 | QA | 不裁剪 | 支持 | 工作产品审核报告 |
| 170 | 6.3.1.4.1 | 审核项目计划 | 1d? | 2009-03-27 | 2009-03-27 | 161.5d | 0503 | 181 | 6.3.1.4.1 | 活动 | QA | 不裁剪 | 支持 | 工作产品审核报告 |
| 171 | 6.3.2 | **需求分析和总体设计阶段** | 1d? | 2009-03-27 | 2009-03-27 | 161.5d |  | 182 | 6.3.2 |  | QA |  |  |  |
| 172 | 6.3.2.1 | **过程审核** | 1d? | 2009-03-27 | 2009-03-27 | 161.5d | 0502 | 183 | 6.3.2.1 | 活动 | QA | 不裁剪 | 支持 | 过程审核报告 |
| 173 | 6.3.2.1.1 | 审核需求分析和总体设计过程 | 1d? | 2009-03-27 | 2009-03-27 | 161.5d | 0502 | 184 | 6.3.2.1.1 | 活动 | QA | 不裁剪 | 支持 | 过程审核报告 |
| 174 | 6.3.2.1.2 | 审核分析决策过程－总体方案选择 | 1d? | 2009-03-27 | 2009-03-27 | 161.5d | 0502 | 185 | 6.3.2.1.2 | 活动 | QA | 不裁剪 | 支持 | 过程审核报告 |
| 175 | 6.3.2.1.3 | 审核评审过程 | 1d? | 2009-03-27 | 2009-03-27 | 161.5d | 0502 | 186 | 6.3.2.1.3 | 活动 | QA | 不裁剪 | 支持 | 过程审核报告 |
| 176 | 6.3.2.2 | **产品审核** | 1d? | 2009-03-27 | 2009-03-27 | 161.5d | 0503 | 187 | 6.3.2.2 | 活动 | QA | 不裁剪 | 支持 | 工作产品审核报告 |
| 177 | 6.3.2.2.1 | 审核需求规格说明书 | 1d? | 2009-03-27 | 2009-03-27 | 161.5d | 0503 | 188 | 6.3.2.2.1 | 活动 | QA | 不裁剪 | 支持 | 工作产品审核报告 |
| 178 | 6.3.2.2.2 | 审核技术总体方案 | 1d? | 2009-03-27 | 2009-03-27 | 161.5d | 0503 | 189 | 6.3.2.2.2 | 活动 | QA | 不裁剪 | 支持 | 工作产品审核报告 |
| 179 | 6.3.2.2.3 | 审核测试需求 | 1d? | 2009-03-27 | 2009-03-27 | 161.5d | 0503 | 190 | 6.3.2.2.3 | 活动 | QA | 不裁剪 | 支持 | 工作产品审核报告 |
| 180 | 6.3.3 | **设计开发测试阶段** | 1d? | 2009-03-27 | 2009-03-27 | 161.5d |  | 191 | 6.3.3 |  | QA |  |  |  |
| 181 | 6.3.3.1 | **概要设计子阶段** | 1d? | 2009-03-27 | 2009-03-27 | 161.5d |  | 192 | 6.3.3.1 |  | QA |  |  |  |
| 182 | 6.3.3.1.1 | **过程审核** | 1d? | 2009-03-27 | 2009-03-27 | 161.5d | 0502 | 193 | 6.3.3.1.1 | 活动 | QA | 不裁剪 | 支持 | 过程审核报告 |
| 183 | 6.3.3.1.1.1 | 审核设计开发过程 | 1d? | 2009-03-27 | 2009-03-27 | 161.5d | 0502 | 194 | 6.3.3.1.1.1 | 活动 | QA | 不裁剪 | 支持 | 过程审核报告 |
| 184 | 6.3.3.1.1.2 | 审核需求管理过程 | 1d? | 2009-03-27 | 2009-03-27 | 161.5d | 0502 | 195 | 6.3.3.1.1.2 | 活动 | QA | 不裁剪 | 支持 | 过程审核报告 |
| 185 | 6.3.3.1.2 | **产品审核** | 1d? | 2009-03-27 | 2009-03-27 | 161.5d | 0503 | 196 | 6.3.3.1.2 | 活动 | QA | 不裁剪 | 支持 | 工作产品审核报告 |
| 186 | 6.3.3.1.2.1 | 审核概要设计文档 | 1d? | 2009-03-27 | 2009-03-27 | 161.5d | 0503 | 197 | 6.3.3.1.2.1 | 活动 | QA | 不裁剪 | 支持 | 工作产品审核报告 |
| 187 | 6.3.3.1.2.2 | 审核系统测试方案 | 1d? | 2009-03-27 | 2009-03-27 | 161.5d | 0503 | 198 | 6.3.3.1.2.2 | 活动 | QA | 不裁剪 | 支持 | 工作产品审核报告 |

| ID | WBS | Task | Duration | Start | Finish | Total slack | Text2 | Text4 | Text8 | Text1 | Text5 | Text7 | Text12 | Text13 |
| --- | --- | --- | --- | --- | --- | --- | --- | --- | --- | --- | --- | --- | --- | --- |
| 188 | 6.3.3.2 | **详细设计子阶段** | 1d? | 2009-03-27 | 2009-03-27 | 161.5d | 199 | 6.3.3.2 | QA |  |  |  |  |  |
| 189 | 6.3.3.2.1 | **过程审核** | 1d? | 2009-03-27 | 2009-03-27 | 161.5d | 200 | 6.3.3.2.1 | QA | 0502 | 活动 | 过程审核报告 | 不裁剪 | 支持 |
| 190 | 6.3.3.2.1.1 | 审核设计开发过程 | 1d? | 2009-03-27 | 2009-03-27 | 161.5d | 201 | 6.3.3.2.1.1 | QA | 0502 | 活动 | 过程审核报告 | 不裁剪 | 支持 |
| 191 | 6.3.3.2.2 | **产品审核** | 1d? | 2009-03-27 | 2009-03-27 | 161.5d | 202 | 6.3.3.2.2 | QA | 0503 | 活动 | 工作产品审核报告 | 不裁剪 | 支持 |
| 192 | 6.3.3.2.2.1 | 审核详细设计文档 | 1d? | 2009-03-27 | 2009-03-27 | 161.5d | 203 | 6.3.3.2.2.1 | QA | 0503 | 活动 | 工作产品审核报告 | 不裁剪 | 支持 |
| 193 | 6.3.3.3 | **编码子阶段** | 1d? | 2009-03-27 | 2009-03-27 | 161.5d | 204 | 6.3.3.3 | QA |  |  |  |  |  |
| 194 | 6.3.3.3.1 | **过程审核** | 1d? | 2009-03-27 | 2009-03-27 | 161.5d | 205 | 6.3.3.3.1 | QA | 0502 | 活动 | 过程审核报告 | 不裁剪 | 支持 |
| 195 | 6.3.3.3.1.1 | 审核设计开发过程 | 1d? | 2009-03-27 | 2009-03-27 | 161.5d | 206 | 6.3.3.3.1.1 | QA | 0502 | 活动 | 过程审核报告 | 不裁剪 | 支持 |
| 196 | 6.3.3.3.1.2 | 审核测试过程 | 1d? | 2009-03-27 | 2009-03-27 | 161.5d | 207 | 6.3.3.3.1.2 | QA | 0502 | 活动 | 过程审核报告 | 不裁剪 | 支持 |
| 197 | 6.3.3.3.2 | **产品审核** | 1d? | 2009-03-27 | 2009-03-27 | 161.5d | 208 | 6.3.3.3.2 | QA | 0503 | 活动 | 工作产品审核报告 | 不裁剪 | 支持 |
| 198 | 6.3.3.3.2.1 | 审核代码编写规范 | 1d? | 2009-03-27 | 2009-03-27 | 161.5d | 209 | 6.3.3.3.2.1 | QA | 0503 | 活动 | 工作产品审核报告 | 不裁剪 | 支持 |
| 199 | 6.3.3.3.2.2 | 审核单元测试报告 | 1d? | 2009-03-27 | 2009-03-27 | 161.5d | 210 | 6.3.3.3.2.2 | QA | 0503 | 活动 | 工作产品审核报告 | 不裁剪 | 支持 |
| 200 | 6.3.3.3.2.3 | 审核软件集成测试报告 | 1d? | 2009-03-27 | 2009-03-27 | 161.5d | 211 | 6.3.3.3.2.3 | QA | 0503 | 活动 | 工作产品审核报告 | 不裁剪 | 支持 |
| 201 | 6.3.3.3.2.4 | 审核调整后的系统测试用例 | 1d? | 2009-03-27 | 2009-03-27 | 161.5d | 212 | 6.3.3.3.2.4 | QA | 0503 | 活动 | 工作产品审核报告 | 不裁剪 | 支持 |
| 202 | 6.3.3.3.2.5 | 审核工程实施方案 | 1d? | 2009-03-27 | 2009-03-27 | 161.5d | 213 | 6.3.3.3.2.5 | QA | 0503 | 活动 | 工作产品审核报告 | 不裁剪 | 支持 |
| 203 | 6.3.3.3.2.6 | 审核系统集成手册 | 1d? | 2009-03-27 | 2009-03-27 | 161.5d | 214 | 6.3.3.3.2.6 | QA | 0503 | 活动 | 工作产品审核报告 | 不裁剪 | 支持 |
| 204 | 6.3.3.4 | **内部测试子阶段** | 1d? | 2009-03-27 | 2009-03-27 | 161.5d | 215 | 6.3.3.4 | QA |  |  |  |  |  |
| 205 | 6.3.3.4.1 | **过程审核** | 1d? | 2009-03-27 | 2009-03-27 | 161.5d | 216 | 6.3.3.4.1 | QA | 0502 | 活动 | 过程审核报告 | 不裁剪 | 支持 |
| 206 | 6.3.3.4.1.1 | 审核测试过程 | 1d? | 2009-03-27 | 2009-03-27 | 161.5d | 217 | 6.3.3.4.1.1 | QA | 0502 | 活动 | 过程审核报告 | 不裁剪 | 支持 |
| 207 | 6.3.3.4.2 | **产品审核** | 1d? | 2009-03-27 | 2009-03-27 | 161.5d | 218 | 6.3.3.4.2 | QA | 0503 | 活动 | 工作产品审核报告 | 不裁剪 | 支持 |
| 208 | 6.3.3.4.2.1 | 审核用户操作手册 | 1d? | 2009-03-27 | 2009-03-27 | 161.5d | 219 | 6.3.3.4.2.1 | QA | 0503 | 活动 | 工作产品审核报告 | 不裁剪 | 支持 |
| 209 | 6.3.3.4.2.2 | 审核功能测试报告 | 1d? | 2009-03-27 | 2009-03-27 | 161.5d | 220 | 6.3.3.4.2.2 | QA | 0503 | 活动 | 工作产品审核报告 | 不裁剪 | 支持 |
| 210 | 6.3.3.4.2.3 | 审核非功能性测试报告 | 1d? | 2009-03-27 | 2009-03-27 | 161.5d | 221 | 6.3.3.4.2.3 | QA | 0503 | 活动 | 工作产品审核报告 | 不裁剪 | 支持 |
| 211 | 6.3.3.5 | **外部测试子阶段** | 1d? | 2009-03-27 | 2009-03-27 | 161.5d | 222 | 6.3.3.5 | QA |  |  |  |  |  |
| 212 | 6.3.3.5.1 | **过程审核** | 1d? | 2009-03-27 | 2009-03-27 | 161.5d | 223 | 6.3.3.5.1 | QA | 0502 | 活动 | 过程审核报告 | 不裁剪 | 支持 |
| 213 | 6.3.3.5.1.1 | 审核测试过程 | 1d? | 2009-03-27 | 2009-03-27 | 161.5d | 224 | 6.3.3.5.1.1 | QA | 0502 | 活动 | 过程审核报告 | 不裁剪 | 支持 |

| ID | WBS | Task | Duration | Start | Finish | Total slack | Text1 | Text2 | Text4 | Text5 | Text7 | Text8 | Text12 | Text13 |
| --- | --- | --- | --- | --- | --- | --- | --- | --- | --- | --- | --- | --- | --- | --- |
| 214 | 6.3.3.5.2 | **产品审核** | 1d? | 2009-03-27 | 2009-03-27 | 161.5d | 0503 | 225 | 6.3.3.5.2 | 活动 | 工作产品审核报告 | QA | 不裁剪 | 支持 |
| 215 | 6.3.3.5.2.1 | 审核接口测试报告 | 1d? | 2009-03-27 | 2009-03-27 | 161.5d | 0503 | 226 | 6.3.3.5.2.1 | 活动 | 工作产品审核报告 | QA | 不裁剪 | 支持 |
| 216 | 6.3.3.5.2.2 | 审核联调测试报告 | 1d? | 2009-03-27 | 2009-03-27 | 161.5d | 0503 | 227 | 6.3.3.5.2.2 | 活动 | 工作产品审核报告 | QA | 不裁剪 | 支持 |
| 217 | 6.3.4 | **工程实施阶段** | 1d? | 2009-03-27 | 2009-03-27 | 161.5d |  | 228 | 6.3.4 |  |  | QA |  |  |
| 218 | 6.3.4.1 | **过程审核** | 1d? | 2009-03-27 | 2009-03-27 | 161.5d | 0502 | 229 | 6.3.4.1 | 活动 | 过程审核报告 | QA | 不裁剪 | 支持 |
| 219 | 6.3.4.1.1 | 系统集成和工程实施过程审核 | 1d? | 2009-03-27 | 2009-03-27 | 161.5d | 0502 | 230 | 6.3.4.1.1 | 活动 | 过程审核报告 | QA | 不裁剪 | 支持 |
| 220 | 6.3.4.2 | **产品审核** | 1d? | 2009-03-27 | 2009-03-27 | 161.5d | 0503 | 231 | 6.3.4.2 | 活动 | 工作产品审核报告 | QA | 不裁剪 | 支持 |
| 221 | 6.3.4.2.1 | 审核模拟运行报告 | 1d? | 2009-03-27 | 2009-03-27 | 161.5d | 0503 | 232 | 6.3.4.2.1 | 活动 | 工作产品审核报告 | QA | 不裁剪 | 支持 |
| 222 | 6.3.5 | 审核项目跟踪与监控过程（周期性任务） | 1d? | 2009-03-27 | 2009-03-27 | 161.5d | 0502 | 233 | 6.3.5 | 活动 | 过程审核报告 | QA | 不裁剪 | 支持 |
| 223 | 6.3.6 | 审核需求管理过程（周期性任务） | 1d? | 2009-03-27 | 2009-03-27 | 161.5d | 0502 | 234 | 6.3.6 | 活动 | 过程审核报告 | QA | 不裁剪 | 支持 |
| 224 | 6.3.7 | 审核配置管理过程（周期性任务） | 1d? | 2009-03-27 | 2009-03-27 | 161.5d | 0502 | 235 | 6.3.7 | 活动 | 过程审核报告 | QA | 不裁剪 | 支持 |
| 225 | 6.3.8 | 审核度量分析过程（周期性任务） | 1d? | 2009-03-27 | 2009-03-27 | 161.5d | 0502 | 236 | 6.3.8 | 活动 | 过程审核报告 | QA | 不裁剪 | 支持 |
| 226 | 6.3.9 | 处理偏差（周期性任务） | 1d? | 2009-03-27 | 2009-03-27 | 161.5d | 0504 | 237 | 6.3.9 | 活动 |  | QA | 裁剪输出 | 支持 |
| 227 | 6.4 | **度量分析** | 1d? | 2009-03-27 | 2009-03-27 | 161.5d | 0700 | 238 | 6.4 | 活动 |  | 度量 | 不裁剪 | 支持 |
| 228 | 6.4.1 | **项目启动和计划阶段** | 1d? | 2009-03-27 | 2009-03-27 | 161.5d |  | 239 | 6.4.1 |  |  | 度量 |  |  |
| 229 | 6.4.1.1 | 创建度量计划 | 1d? | 2009-03-27 | 2009-03-27 | 161.5d |  | 240 | 6.4.1.1 |  |  | 度量 |  |  |
| 230 | 6.4.2 | **需求分析和总体设计阶段** | 1d? | 2009-03-27 | 2009-03-27 | 161.5d |  | 241 | 6.4.2 |  |  | 度量 |  |  |
| 231 | 6.4.2.1 | 阶段度量基线（阶段结束时） | 1d? | 2009-03-27 | 2009-03-27 | 161.5d | 0702 | 242 | 6.4.2.1 | 活动 | 《项目监控与度量数据跟踪表》 | 度量 | 不裁剪 | 支持 |
| 232 | 6.4.2.2 | 阶段度量报告（阶段结束时） | 1d? | 2009-03-27 | 2009-03-27 | 161.5d | 0702 | 243 | 6.4.2.2 | 活动 | 《项目监控与度量数据跟踪表》 | 度量 | 不裁剪 | 支持 |
| 233 | 6.4.3 | **设计开发测试阶段** | 1d? | 2009-03-27 | 2009-03-27 | 161.5d |  | 244 | 6.4.3 |  |  | 度量 |  |  |
| 234 | 6.4.3.1 | 阶段度量基线（阶段结束时） | 1d? | 2009-03-27 | 2009-03-27 | 161.5d | 0702 | 245 | 6.4.3.1 | 活动 | 《项目监控与度量数据跟踪表》 | 度量 | 不裁剪 | 支持 |
| 235 | 6.4.3.2 | 阶段度量报告（阶段结束时） | 1d? | 2009-03-27 | 2009-03-27 | 161.5d | 0702 | 246 | 6.4.3.2 | 活动 | 《项目监控与度量数据跟踪表》 | 度量 | 不裁剪 | 支持 |
| 236 | 6.4.4 | **概要设计子阶段** | 1d? | 2009-03-27 | 2009-03-27 | 161.5d |  | 247 | 6.4.4 |  |  | 度量 |  |  |
| 237 | 6.4.4.1 | 阶段度量基线（阶段结束时） | 1d? | 2009-03-27 | 2009-03-27 | 161.5d | 0702 | 248 | 6.4.4.1 | 活动 | 《项目监控与度量数据跟踪表》 | 度量 | 不裁剪 | 支持 |
| 238 | 6.4.4.2 | 阶段度量报告（阶段结束时） | 1d? | 2009-03-27 | 2009-03-27 | 161.5d | 0702 | 249 | 6.4.4.2 | 活动 | 《项目监控与度量数据跟踪表》 | 度量 | 不裁剪 | 支持 |

| ID | WBS | Task | Duration | Start | Finish | Total slack | Text2 | Text4 | Text8 | Text1 | Text5 | Text7 | Text12 | Text13 |
| --- | --- | --- | --- | --- | --- | --- | --- | --- | --- | --- | --- | --- | --- | --- |
| 239 | 6.4.5 | **详细设计子阶段** | 1d? | 2009-03-27 | 2009-03-27 | 161.5d | 250 | 6.4.5 | 度量 |  |  |  |  |  |
| 240 | 6.4.5.1 | 阶段度量基线（阶段结束时） | 1d? | 2009-03-27 | 2009-03-27 | 161.5d | 251 | 6.4.5.1 | 度量 | 0702 | 活动 | 《项目监控与度量数据跟踪表》 | 不裁剪 | 支持 |
| 241 | 6.4.5.2 | 阶段度量报告（阶段结束时） | 1d? | 2009-03-27 | 2009-03-27 | 161.5d | 252 | 6.4.5.2 | 度量 | 0702 | 活动 | 《项目监控与度量数据跟踪表》 | 不裁剪 | 支持 |
| 242 | 6.4.6 | **编码子阶段** | 1d? | 2009-03-27 | 2009-03-27 | 161.5d | 253 | 6.4.6 | 度量 |  |  |  |  |  |
| 243 | 6.4.6.1 | 阶段度量基线（阶段结束时） | 1d? | 2009-03-27 | 2009-03-27 | 161.5d | 254 | 6.4.6.1 | 度量 | 0702 | 活动 | 《项目监控与度量数据跟踪表》 | 不裁剪 | 支持 |
| 244 | 6.4.6.2 | 阶段度量报告（阶段结束时） | 1d? | 2009-03-27 | 2009-03-27 | 161.5d | 255 | 6.4.6.2 | 度量 | 0702 | 活动 | 《项目监控与度量数据跟踪表》 | 不裁剪 | 支持 |
| 245 | 6.4.7 | **内部测试子阶段** | 1d? | 2009-03-27 | 2009-03-27 | 161.5d | 256 | 6.4.7 | 度量 |  |  |  |  |  |
| 246 | 6.4.7.1 | 阶段度量基线（阶段结束时） | 1d? | 2009-03-27 | 2009-03-27 | 161.5d | 257 | 6.4.7.1 | 度量 | 0702 | 活动 | 《项目监控与度量数据跟踪表》 | 不裁剪 | 支持 |
| 247 | 6.4.7.2 | 阶段度量报告（阶段结束时） | 1d? | 2009-03-27 | 2009-03-27 | 161.5d | 258 | 6.4.7.2 | 度量 | 0702 | 活动 | 《项目监控与度量数据跟踪表》 | 不裁剪 | 支持 |
| 248 | 6.4.8 | **外部测试子阶段** | 1d? | 2009-03-27 | 2009-03-27 | 161.5d | 259 | 6.4.8 | 度量 |  |  |  |  |  |
| 249 | 6.4.8.1 | 阶段度量基线（阶段结束时） | 1d? | 2009-03-27 | 2009-03-27 | 161.5d | 260 | 6.4.8.1 | 度量 | 0702 | 活动 | 《项目监控与度量数据跟踪表》 | 不裁剪 | 支持 |
| 250 | 6.4.8.2 | 阶段度量报告（阶段结束时） | 1d? | 2009-03-27 | 2009-03-27 | 161.5d | 261 | 6.4.8.2 | 度量 | 0702 | 活动 | 《项目监控与度量数据跟踪表》 | 不裁剪 | 支持 |
| 251 | 6.4.9 | **工程实施阶段** | 1d? | 2009-03-27 | 2009-03-27 | 161.5d | 262 | 6.4.9 | 度量 |  |  |  |  |  |
| 252 | 6.4.9.1 | 阶段度量基线（阶段结束时） | 1d? | 2009-03-27 | 2009-03-27 | 161.5d | 263 | 6.4.9.1 | 度量 | 0702 | 活动 | 《项目监控与度量数据跟踪表》 | 不裁剪 | 支持 |
| 253 | 6.4.9.2 | 阶段度量报告（阶段结束时） | 1d? | 2009-03-27 | 2009-03-27 | 161.5d | 264 | 6.4.9.2 | 度量 | 0702 | 活动 | 《项目监控与度量数据跟踪表》 | 不裁剪 | 支持 |
| 254 | 6.4.9.3 | 项目总体结项度量报告 | 1d? | 2009-03-27 | 2009-03-27 | 161.5d | 265 | 6.4.9.3 | 度量 |  |  |  |  |  |
| 255 | 6.4.10 | 填写项目监控与度量数据跟踪表 | 1d? | 2009-03-27 | 2009-03-27 | 161.5d | 266 | 6.4.10 | 度量 | 0702 | 活动 | 《项目监控与度量数据跟踪表》 | 不裁剪 | 支持 |
| 256 | 6.4.11 | 保存度量基线（周期性任务） | 1d? | 2009-03-27 | 2009-03-27 | 161.5d | 267 | 6.4.11 | 度量 | 0702 | 活动 | 《项目监控与度量数据跟踪表》 | 不裁剪 | 支持 |
