# 内审业务综合管理系统

Schedule from MS Project, 2009-04-13 to 2009-07-16, status date 2009-03-31, A marks actual dates.

## Calendars

- 标准: Mon-Fri 08:00-12:00, 13:00-17:00; Sat-Sun off.

## Resources

| Resource | Group |
| --- | --- |
| 尹海 | 开发二部 |
| 杜海雷 | 开发二部 |
| 杨蕾 |  |
| 姜凤祥 | 开发二部 |
| 马剑 | 开发二部 |
| 靳晔 | 开发二部 |
| 于鹏 | 开发二部 |
| 郗新江 | 开发二部 |
| 国杰 | 开发二部 |
| 陈志东 |  |
| 张海亮 |  |
| 刘小维 |  |
| 李晓娜 |  |
| 赵春华 |  |

## Schedule

| ID | WBS | Task | Type | Duration | Start | Finish | Predecessors | Remaining | Baseline start | Baseline finish | Baseline duration | Total slack | Free slack | Constraint | Resources | Work | Text6 | Text17 | Text22 |
| --- | --- | --- | --- | --- | --- | --- | --- | --- | --- | --- | --- | --- | --- | --- | --- | --- | --- | --- | --- |
| 1 | 1 | **数据质量监控子系统** |  | 69d | 2009-04-13 A | 2009-07-16 |  | 69d |  |  |  | 0d |  | start no earlier than 2009-02-09 |  | 508h |  |  |  |
| 2 | 1.1 | **需求分析** |  | 5d | 2009-04-13 | 2009-04-17 |  |  | 2006-03-06 | 2006-06-23 | 77d | 64d |  |  | 张海亮 | 40h | 金电公司 | 171 |  |
| 3 | 1.1.1 | 需求分析内部提交 |  | 3d | 2009-04-13 | 2009-04-15 |  |  |  |  |  | 64d | 0d | start no earlier than 2009-04-13 |  |  |  |  |  |
| 4 | 1.1.2 | 需求分析内部评审 |  | 1d | 2009-04-16 | 2009-04-16 | 3 |  |  |  |  | 64d | 0d | start no earlier than 2009-02-25 |  |  |  |  |  |
| 5 | 1.1.3 | 需求分析内部评审后修改 |  | 1d | 2009-04-17 | 2009-04-17 | 4 |  |  |  |  | 64d |  |  |  |  |  |  |  |
| 6 | 1.2 | **应用软件开发** |  | 51d | 2009-04-20 A | 2009-06-29 |  | 51d |  |  |  | 13d |  |  |  | 468h |  | 1152 |  |
| 7 | 1.2.1 | **概要设计** |  | 5d | 2009-04-20 | 2009-04-24 |  |  | 2006-04-17 | 2006-05-26 | 27d | 0d |  |  | 张海亮 | 40h | 金电公司 |  |  |
| 8 | 1.2.1.1 | 系统概要设计 |  | 3d | 2009-04-20 | 2009-04-22 |  |  | 2006-04-17 | 2006-05-17 | 20d | 0d |  | start no earlier than 2009-04-20 |  |  |  |  |  |
| 9 | 1.2.1.2 | 内部提交系统概要设计说明书 | milestone | 0d | 2009-04-22 | 2009-04-22 | 8 |  | 2006-05-18 | 2006-05-18 | 1d | 0d |  |  |  |  |  |  | 概要设计说明书 |
| 10 | 1.2.1.3 | 概要设计文档评审或文档测试 |  | 1d | 2009-04-23 | 2009-04-23 | 9 |  | 2006-05-26 | 2006-05-26 | 1d | 0d |  |  |  |  |  |  |  |
| 11 | 1.2.1.4 | 概要设计评审后修改及定稿 |  | 1d | 2009-04-24 | 2009-04-24 | 10 |  |  |  |  | 0d |  |  |  |  |  |  |  |
| 12 | 1.2.2 | **详细设计** |  | 6d | 2009-04-27 | 2009-05-04 |  |  | 2006-04-17 | 2006-05-26 | 27d | 0d |  |  | 张海亮 | 48h | 金电公司 |  |  |
| 13 | 1.2.2.1 | 系统详细设计 |  | 3d | 2009-04-27 | 2009-04-29 | 11 |  | 2006-04-17 | 2006-05-17 | 20d | 0d |  | start no earlier than 2009-02-24 |  |  |  |  |  |
| 14 | 1.2.2.2 | 内部提交系统详细设计说明书 | milestone | 0d | 2009-04-29 | 2009-04-29 | 13 |  | 2006-05-18 | 2006-05-18 | 1d | 0d |  |  |  |  |  |  | 详细设计说明书 |
| 15 | 1.2.2.3 | 详细设计文档评审或文档测试 |  | 1d | 2009-04-30 | 2009-04-30 | 14 |  | 2006-05-26 | 2006-05-26 | 1d | 54d | 1d |  |  |  |  |  |  |
| 16 | 1.2.2.4 | 详细设计评审后修改及定稿 |  | 1d | 2009-05-04 | 2009-05-04 | 15 |  |  |  |  | 53d |  | start no earlier than 2009-05-04 |  |  |  |  |  |
| 17 | 1.2.3 | **数据库设计** |  | 7d | 2009-04-20 A | 2009-04-28 |  | 7d | 2006-04-17 | 2006-05-26 | 27d | 57d |  |  | 张海亮 | 56h | 金电公司 |  |  |
| 18 | 1.2.3.1 | 数据库设计 |  | 3d | 2009-04-20 | 2009-04-22 |  |  | 2006-04-17 | 2006-05-17 | 20d | 0d |  | start no earlier than 2009-04-20 |  |  |  |  |  |
| 19 | 1.2.3.2 | 内部提交数据库设计说明书 | milestone | 0d | 2009-04-23 A | 2009-04-23 | 18 | 0d | 2006-05-18 | 2006-05-18 | 1d | 57d | 0d |  |  |  |  |  | 数据库设计说明书 |
| 20 | 1.2.3.3 | 数据库设计文档评审或文档测试 |  | 3d | 2009-04-23 | 2009-04-27 | 19 |  | 2006-05-26 | 2006-05-26 | 1d | 57d | 0d |  |  |  |  |  |  |
| 21 | 1.2.3.4 | 数据库设计评审后修改及定稿 |  | 1d | 2009-04-28 | 2009-04-28 | 20 |  |  |  |  | 57d |  |  |  |  |  |  |  |
| 22 | 1.2.4 | **应用设计与编码实现** |  | 39d | 2009-05-06 | 2009-06-29 |  |  | 2006-06-22 | 2006-09-13 | 60d | 13d |  |  |  | 324h | 金电公司 |  |  |
| 23 | 1.2.4.1 | **数据库开发实现** |  | 2.5d | 2009-05-06 | 2009-05-08 |  |  |  |  |  | 49.5d |  |  |  | 20h |  |  |  |
| 24 | 1.2.4.1.1 | **数据库开发实现** |  | 2.5d | 2009-05-06 | 2009-05-08 |  |  |  |  |  | 49.5d |  |  | 张海亮 | 20h |  |  |  |
| 25 | 1.2.4.1.1.1 | 1、代码编写 |  | 2d | 2009-05-06 | 2009-05-07 |  |  |  |  |  | 49.5d | 0d | start no earlier than 2009-05-06 |  |  |  |  |  |
| 26 | 1.2.4.1.1.2 | 2、代码走查 |  | 0.5d | 2009-05-08 | 2009-05-08 | 25 |  |  |  |  | 49.5d |  |  |  |  |  |  |  |

Notes:
- 2: 3
- 6: 12

| ID | WBS | Task | Duration | Start | Finish | Predecessors | Total slack | Free slack | Constraint | Resources | Work |
| --- | --- | --- | --- | --- | --- | --- | --- | --- | --- | --- | --- |
| 27 | 1.2.4.2 | **问题登记反馈** | 17d | 2009-05-08 | 2009-06-01 |  | 33d |  |  |  | 144h |
| 28 | 1.2.4.2.1 | **一、问题登记** | 4d | 2009-05-08 | 2009-05-13 |  | 46d |  |  | 张海亮 | 32h |
| 29 | 1.2.4.2.1.1 | 1、代码编写 | 3.5d | 2009-05-08 | 2009-05-13 |  | 46d | 0d | start no earlier than 2009-05-08 |  |  |
| 30 | 1.2.4.2.1.2 | 2、代码走查 | 0.5d | 2009-05-13 | 2009-05-13 | 29 | 46d |  |  |  |  |
| 31 | 1.2.4.2.2 | **二、问题回复** | 3d | 2009-05-14 | 2009-05-18 |  | 43d |  |  | 张海亮 | 24h |
| 32 | 1.2.4.2.2.1 | 1、代码编写 | 2.5d | 2009-05-14 | 2009-05-18 |  | 43d | 0d | start no earlier than 2009-05-14 |  |  |
| 33 | 1.2.4.2.2.2 | 2、代码走查 | 0.5d | 2009-05-18 | 2009-05-18 | 32 | 43d |  |  |  |  |
| 34 | 1.2.4.2.3 | **三、问题评价** | 5d | 2009-05-19 | 2009-05-25 |  | 38d |  |  | 张海亮 | 40h |
| 35 | 1.3.4.1.1.3.1 | 1、代码编写 | 4.5d | 2009-05-19 | 2009-05-25 |  | 38d | 0d | start no earlier than 2009-05-19 |  |  |
| 36 | 1.3.4.1.1.3.2 | 2、代码走查 | 0.5d | 2009-05-25 | 2009-05-25 | 35 | 38d |  |  |  |  |
| 37 | 1.2.4.2.4 | **四、问题统计** | 3d | 2009-05-26 | 2009-05-28 |  | 35d |  |  | 张海亮 | 24h |
| 38 | 1.2.4.2.4.1 | 1、代码编写 | 2.5d | 2009-05-26 | 2009-05-28 |  | 35d | 0d | start no earlier than 2009-05-26 |  |  |
| 39 | 1.2.4.2.4.2 | 2、代码走查 | 0.5d | 2009-05-28 | 2009-05-28 | 38 | 35d |  |  |  |  |
| 40 | 1.2.4.2.5 | **五、问题查询** | 3d | 2009-05-28 | 2009-06-01 |  | 33d |  |  | 张海亮 | 24h |
| 41 | 1.2.4.2.5.1 | 1、代码编写 | 2.5d | 2009-05-28 | 2009-06-01 |  | 33d | 0d | start no earlier than 2009-05-28 |  |  |
| 42 | 1.2.4.2.5.2 | 2、代码走查 | 0.5d | 2009-06-01 | 2009-06-01 | 41 | 33d |  |  |  |  |
| 43 | 1.2.4.3 | **报表生成** | 8d | 2009-06-02 | 2009-06-11 |  | 25d |  |  |  | 64h |
| 44 | 1.2.4.3.1 | **一、生成数据质量统计表** | 4d | 2009-06-02 | 2009-06-05 |  | 29d |  |  | 张海亮 | 32h |
| 45 | 1.2.4.3.1.1 | 1、代码编写 | 3.5d | 2009-06-02 | 2009-06-05 |  | 29d | 0d | start no earlier than 2009-06-02 |  |  |
| 46 | 1.2.4.3.1.2 | 2、代码走查 | 0.5d | 2009-06-05 | 2009-06-05 | 45 | 29d |  |  |  |  |
| 47 | 1.2.4.3.2 | **二、生成一笔变两笔业务清单** | 2d | 2009-06-08 | 2009-06-09 |  | 27d |  |  | 张海亮 | 16h |
| 48 | 1.2.4.3.2.1 | 1、代码编写 | 1.5d | 2009-06-08 | 2009-06-09 |  | 27d | 0d | start no earlier than 2009-06-08 |  |  |
| 49 | 1.2.4.3.2.2 | 2、代码走查 | 0.5d | 2009-06-09 | 2009-06-09 | 48 | 27d |  |  |  |  |
| 50 | 1.2.4.3.3 | **三、生成入库业务清单** | 2d | 2009-06-10 | 2009-06-11 |  | 25d |  |  | 张海亮 | 16h |
| 51 | 1.2.4.3.3.1 | 1、代码编写 | 1.5d | 2009-06-10 | 2009-06-11 |  | 25d | 0d | start no earlier than 2009-06-10 |  |  |
| 52 | 1.2.4.3.3.2 | 2、代码走查 | 0.5d | 2009-06-11 | 2009-06-11 | 51 | 25d |  |  |  |  |

| ID | WBS | Task | Type | Duration | Start | Finish | Predecessors | Baseline start | Baseline finish | Baseline duration | Total slack | Free slack | Constraint | Resources | Work | Text22 | Text17 | Text6 |
| --- | --- | --- | --- | --- | --- | --- | --- | --- | --- | --- | --- | --- | --- | --- | --- | --- | --- | --- |
| 53 | 1.2.4.4 | **信息查询** |  | 7d | 2009-06-11 | 2009-06-19 |  |  |  |  | 19d |  |  |  | 56h |  |  |  |
| 54 | 1.2.4.4.1 | **一、数据质量统计表查询** |  | 3d | 2009-06-11 | 2009-06-15 |  |  |  |  | 23d |  |  | 陈志东 | 24h |  |  |  |
| 55 | 1.2.4.4.1.1 | 1、代码编写 |  | 2.5d | 2009-06-11 | 2009-06-15 |  |  |  |  | 23d | 0d | start no earlier than 2009-06-11 |  |  |  |  |  |
| 56 | 1.2.4.4.1.2 | 2、代码走查 |  | 0.5d | 2009-06-15 | 2009-06-15 | 55 |  |  |  | 23d |  |  |  |  |  |  |  |
| 57 | 1.2.4.4.2 | **二、一笔变两笔业务清单查询** |  | 2d | 2009-06-16 | 2009-06-17 |  |  |  |  | 21d |  |  | 陈志东 | 16h |  |  |  |
| 58 | 1.2.4.4.2.1 | 1、代码编写 |  | 1.5d | 2009-06-16 | 2009-06-17 |  |  |  |  | 21d | 0d | start no earlier than 2009-06-16 |  |  |  |  |  |
| 59 | 1.2.4.4.2.2 | 2、代码走查 |  | 0.5d | 2009-06-17 | 2009-06-17 | 58 |  |  |  | 21d |  |  |  |  |  |  |  |
| 60 | 1.2.4.4.3 | **三、业务清单查询** |  | 2d | 2009-06-18 | 2009-06-19 |  |  |  |  | 19d |  |  | 陈志东 | 16h |  |  |  |
| 61 | 1.2.4.4.3.1 | 1、代码编写 |  | 1.5d | 2009-06-18 | 2009-06-19 |  |  |  |  | 19d | 0d | start no earlier than 2009-06-18 |  |  |  |  |  |
| 62 | 1.2.4.4.3.2 | 2、代码走查 |  | 0.5d | 2009-06-19 | 2009-06-19 | 61 |  |  |  | 19d |  |  |  |  |  |  |  |
| 63 | 1.2.4.5 | **日志管理** |  | 3d | 2009-06-23 | 2009-06-25 |  |  |  |  | 15d |  |  |  | 24h |  |  |  |
| 64 | 1.2.4.5.1 | **一、日志查询** |  | 3d | 2009-06-23 | 2009-06-25 |  |  |  |  | 15d |  |  | 陈志东 | 24h |  |  |  |
| 65 | 1.2.4.5.1.1 | 1、代码编写 |  | 2.5d | 2009-06-23 | 2009-06-25 |  |  |  |  | 15d | 0d | start no earlier than 2009-06-23 |  |  |  |  |  |
| 66 | 1.2.4.5.1.2 | 2、代码走查 |  | 0.5d | 2009-06-25 | 2009-06-25 | 65 |  |  |  | 15d |  |  |  |  |  |  |  |
| 67 | 1.2.4.6 | **第一轮联调测试** |  | 2d | 2009-06-26 | 2009-06-29 |  |  |  |  | 13d |  |  |  | 16h |  |  |  |
| 68 | 1.2.4.6.1 | **一、第一轮联调测试** |  | 2d | 2009-06-26 | 2009-06-29 |  |  |  |  | 13d |  |  | 陈志东 | 16h |  |  |  |
| 69 | 1.2.4.6.1.1 | 1、测试 |  | 1.5d | 2009-06-26 | 2009-06-29 |  |  |  |  | 13d | 0d | start no earlier than 2009-06-26 |  |  |  |  |  |
| 70 | 1.2.4.6.1.2 | 2、测试结果反馈 |  | 0.5d | 2009-06-29 | 2009-06-29 | 69 |  |  |  | 13d |  |  |  |  | 测试报告 |  |  |
| 71 | 1.3 | **系统测试** |  | 12d | 2009-07-01 | 2009-07-16 |  |  |  |  | 0d |  |  |  |  |  | 435 |  |
| 72 | 1.3.1 | **应用测试** |  | 7d | 2009-07-01 | 2009-07-09 |  | 2006-08-03 | 2006-10-30 | 60d | 5d |  |  |  |  |  |  |  |
| 73 | 1.3.1.1 | 测试方案编写 |  | 5d | 2009-07-01 | 2009-07-07 |  |  |  |  | 5d | 0d | start no earlier than 2009-07-01 |  |  |  |  |  |
| 74 | 1.3.1.2 | 测试方案评审 |  | 1d | 2009-07-08 | 2009-07-08 | 73 |  |  |  | 5d | 0d |  |  |  |  |  |  |
| 75 | 1.3.1.3 | 测试方案修改 |  | 1d | 2009-07-09 | 2009-07-09 | 74 |  |  |  | 5d |  |  |  |  |  |  |  |
| 76 | 1.3.2 | **业务测试** |  | 8d | 2009-07-07 | 2009-07-16 |  | 2006-09-28 | 2006-10-30 | 20d | 0d |  |  |  |  |  |  |  |
| 77 | 1.3.2.1 | **第一次业务测试** |  | 4d | 2009-07-07 | 2009-07-10 |  |  |  |  | 0d |  |  |  |  |  |  |  |
| 78 | 1.3.2.1.1 | 第一次业务测试 |  | 2d | 2009-07-07 | 2009-07-08 |  |  |  |  | 0d |  | start no earlier than 2009-07-07 |  |  |  |  | 内审司、金电公司 |
| 79 | 1.3.2.1.2 | 第一次业务测试报告提交 | milestone | 0d | 2009-07-08 | 2009-07-08 | 78 |  |  |  | 6d |  |  |  |  | 系统测试报告 |  | 内审司 |
| 80 | 1.3.2.1.3 | 第一次业务测试修改 |  | 2d | 2009-07-09 | 2009-07-10 | 78 |  |  |  | 0d |  |  |  |  |  |  | 金电公司 |

Notes:
- 71: 5

| ID | WBS | Task | Type | Duration | Start | Finish | Predecessors | Total slack | Constraint | Text6 | Text22 |
| --- | --- | --- | --- | --- | --- | --- | --- | --- | --- | --- | --- |
| 81 | 1.3.2.2 | **第二次业务测试** |  | 4d | 2009-07-13 | 2009-07-16 |  | 0d |  |  |  |
| 82 | 1.3.2.2.1 | 第二次业务测试 |  | 2d | 2009-07-13 | 2009-07-14 | 80 | 0d |  | 内审司、金电公司 |  |
| 83 | 1.3.2.2.2 | 第二次业务测试报告提交 | milestone | 0d | 2009-07-14 | 2009-07-14 | 82 | 2d |  | 内审司 | 系统测试报告 |
| 84 | 1.3.2.2.3 | 第二次业务测试修改 |  | 2d | 2009-07-15 | 2009-07-16 | 82 | 0d |  | 金电公司 |  |
| 85 | 1.4 | 应用软件定版 | milestone | 0d | 2009-07-16 | 2009-07-16 | 84 | 0d | start no earlier than 2008-10-01 |  |  |
